# WBS- Damaris

Schedule from MS Project, 2019-02-15 to 2019-07-22, costs in R$, A marks actual dates.
SESI SENAI SP

## Calendars

- TCC: Mon 07:30-11:30; Tue off; Wed-Fri 07:30-11:30; Sat-Sun off.

## Resources

| Resource | Rate | Notes |
| --- | --- | --- |
| Desenvolvedor Web - IF | 21.98 | Igor Feitosa |
| Desenvolvedor Web - LC | 21.98 | Leonardo Cavalcante |
| Desenvolvedor Web - EM | 21.98 |  |
| Desenvolvedor Web - KS | 21.98 |  |
| Desenvolvedor Web - SO | 21.98 |  |
| Desenvolvedor Mobile - IF | 26.41 |  |
| Desenvolvedor Desktop - LC | 30.56 |  |
| Administrador de Banco de Dados - LC | 30.12 |  |
| Administrador de Banco de Dados - IF | 30.12 |  |
| Supervisor de Desenvolvimento - EM | 32.58 |  |
| Desenvolvedor Mobile - LC | 26.41 |  |
| Desenvolvedor Mobile - EM | 26.41 |  |
| Desenvolvedor Mobile - KS | 26.41 |  |
| Desenvolvedor Mobile - SO | 26.41 |  |
| Administrador de Banco de Dados - EM | 30.12 |  |
| Administrador de Banco de Dados - SO | 30.12 |  |
| Administrador de Banco de Dados - KS | 30.12 |  |
| Desenvolvedor Desktop - SO | 30.56 |  |
| Desenvolvedor Desktop - EM | 30.56 |  |
| Desenvolvedor Desktop - KS | 30.56 |  |
| Desenvolvedor Desktop - IF | 30.56 |  |

## Schedule

| ID | WBS | Task | Type | Duration | Start | Finish | Predecessors | Complete | Remaining | Baseline start | Baseline finish | Baseline duration | Total slack | Free slack | Resources | Work | Actual work | Cost | Baseline cost | Actual cost |
| --- | --- | --- | --- | --- | --- | --- | --- | --- | --- | --- | --- | --- | --- | --- | --- | --- | --- | --- | --- | --- |
| 1 | 1 | **PROJETO MOB'SHARE** |  | 44.75d | 2019-02-15 07:30 A | 2019-07-22 09:30 |  | 28% | 32.33d | 2019-02-15 07:30 | 2019-07-22 09:30 | 44.75d | 0d |  |  | 1365h | 394h | 34,940.28 | 34,940.28 | 10,211.83 |
| 2 | 1.1 | **PLANEJAMENTO** |  | 11.25d | 2019-02-15 07:30 A | 2019-03-27 09:30 |  | 56% | 4.99d | 2019-02-15 07:30 | 2019-03-27 09:30 | 11.25d | 0d |  |  | 335h | 205h | 8,076.68 | 8,076.68 | 5,166.27 |
| 3 | 1.1.1 | **Levantamento de Requisitos** |  | 2.75d | 2019-02-15 07:30 A | 2019-02-25 09:30 A |  | 100% |  | 2019-02-15 07:30 | 2019-02-25 09:30 | 2.75d |  |  |  | 77h | 77h | 1,889.84 | 1,889.84 | 1,889.84 |
| 4 | 1.1.1.1 | **Elaboração de perguntas** |  | 1.5d | 2019-02-15 07:30 A | 2019-02-20 11:30 A |  | 100% |  | 2019-02-15 07:30 | 2019-02-20 11:30 | 1.5d |  |  |  | 48h | 48h | 1,204.65 | 1,204.65 | 1,204.65 |
| 5 | 1.1.1.1.1 | Web |  | 5h | 2019-02-15 07:30 A | 2019-02-18 08:30 A |  | 100% |  | 2019-02-15 07:30 | 2019-02-18 08:30 | 5h |  |  | Desenvolvedor Web - EM; Desenvolvedor Web - IF; Desenvolvedor Web - KS; Desenvolvedor Web - LC; Desenvolvedor Web - SO | 25h | 25h | 549.5 | 549.5 | 549.5 |
| 6 | 1.1.1.1.2 | Mobile |  | 3.5h | 2019-02-18 08:30 A | 2019-02-20 08:00 A | 5 | 100% |  | 2019-02-18 08:30 | 2019-02-20 08:00 | 3.5h |  |  | Desenvolvedor Mobile - EM; Desenvolvedor Mobile - IF; Desenvolvedor Mobile - KS; Desenvolvedor Mobile - LC; Desenvolvedor Mobile - SO | 11.5h | 11.5h | 303.71 | 303.71 | 303.71 |
| 7 | 1.1.1.1.3 | Desktop |  | 3.5h | 2019-02-20 08:00 A | 2019-02-20 11:30 A | 6 | 100% |  | 2019-02-20 08:00 | 2019-02-20 11:30 | 3.5h |  |  | Desenvolvedor Desktop - EM; Desenvolvedor Desktop - LC; Desenvolvedor Desktop - IF; Desenvolvedor Desktop - KS; Desenvolvedor Desktop - SO | 11.5h | 11.5h | 351.44 | 351.44 | 351.44 |
| 8 | 1.1.1.2 | **Reunião com cliente** |  | 0.75d | 2019-02-21 07:30 A | 2019-02-22 09:30 A | 4 | 100% |  | 2019-02-21 07:30 | 2019-02-22 09:30 | 0.75d |  |  |  | 20h | 20h | 478.5 | 478.5 | 478.5 |
| 9 | 1.1.1.2.1 | Web - Reunião 1 |  | 2h | 2019-02-21 07:30 A | 2019-02-21 09:30 A |  | 100% |  | 2019-02-21 07:30 | 2019-02-21 09:30 | 2h |  |  | Desenvolvedor Web - EM; Desenvolvedor Web - KS; Desenvolvedor Web - LC | 6h | 6h | 131.88 | 131.88 | 131.88 |
| 10 | 1.1.1.2.2 | Web - Reunião 2 |  | 2h | 2019-02-21 09:30 A | 2019-02-21 11:30 A | 9 | 100% |  | 2019-02-21 09:30 | 2019-02-21 11:30 | 2h |  |  | Desenvolvedor Web - EM; Desenvolvedor Web - IF; Desenvolvedor Web - KS; Desenvolvedor Web - LC; Desenvolvedor Web - SO | 10h | 10h | 219.8 | 219.8 | 219.8 |
| 11 | 1.1.1.2.3 | Desktop |  | 2h | 2019-02-21 11:30 A | 2019-02-22 09:30 A | 10 | 100% |  | 2019-02-21 11:30 | 2019-02-22 09:30 | 2h |  |  | Desenvolvedor Desktop - IF; Desenvolvedor Desktop - KS; Desenvolvedor Desktop - LC; Desenvolvedor Desktop - SO; Administrador de Banco de Dados - EM | 4h | 4h | 126.82 | 126.82 | 126.82 |
| 12 | 1.1.1.2.4 | Mobile | milestone | 0h | 2019-02-22 09:30 A | 2019-02-22 09:30 A | 11 | 100% |  | 2019-02-22 09:30 | 2019-02-22 09:30 |  |  |  | Desenvolvedor Mobile - IF; Desenvolvedor Mobile - LC; Desenvolvedor Mobile - SO; Desenvolvedor Mobile - KS |  |  |  |  |  |
| 13 | 1.1.1.3 | **Documentação do cliente** |  | 0.5d | 2019-02-22 09:30 A | 2019-02-25 09:30 A | 8 | 100% |  | 2019-02-22 09:30 | 2019-02-25 09:30 | 0.5d |  |  |  | 9h | 9h | 206.68 | 206.68 | 206.68 |
| 14 | 1.1.1.3.1 | **ATAS** |  | 0.5d | 2019-02-22 09:30 A | 2019-02-25 09:30 A |  | 100% |  | 2019-02-22 09:30 | 2019-02-25 09:30 | 0.5d |  |  |  | 9h | 9h | 206.68 | 206.68 | 206.68 |
| 15 | 1.1.1.3.1.1 | **WEB - Reunião 1** |  | 0.38d | 2019-02-22 09:30 A | 2019-02-25 08:30 A |  | 100% |  | 2019-02-22 09:30 | 2019-02-25 08:30 | 0.38d |  |  |  | 3h | 3h | 65.94 | 65.94 | 65.94 |
| 16 | 1.1.1.3.1.1.1 | WEB - Reunião 2 |  | 1h | 2019-02-22 09:30 A | 2019-02-22 10:30 A |  | 100% |  | 2019-02-22 09:30 | 2019-02-22 10:30 | 1h |  |  | Desenvolvedor Web - EM | 1h | 1h | 21.98 | 21.98 | 21.98 |
| 17 | 1.1.1.3.1.1.2 | Mobile |  | 1h | 2019-02-22 10:30 A | 2019-02-22 11:30 A | 16 | 100% |  | 2019-02-22 10:30 | 2019-02-22 11:30 | 1h |  |  | Desenvolvedor Web - EM | 1h | 1h | 21.98 | 21.98 | 21.98 |
| 18 | 1.1.1.3.1.1.3 | Desktop |  | 1h | 2019-02-25 07:30 A | 2019-02-25 08:30 A | 17 | 100% |  | 2019-02-25 07:30 | 2019-02-25 08:30 | 1h |  |  | Desenvolvedor Web - EM | 1h | 1h | 21.98 | 21.98 | 21.98 |
| 19 | 1.1.1.3.1.2 | **Levantamento de Requisitos** |  | 0.5d | 2019-02-22 09:30 A | 2019-02-25 09:30 A |  | 100% |  | 2019-02-22 09:30 | 2019-02-25 09:30 | 0.5d |  |  |  | 6h | 6h | 140.74 | 140.74 | 140.74 |
| 20 | 1.1.1.3.1.2.1 | WEB - Reunião 1 |  | 1h | 2019-02-22 09:30 A | 2019-02-22 10:30 A |  | 100% |  | 2019-02-22 09:30 | 2019-02-22 10:30 | 1h |  |  | Desenvolvedor Web - KS; Desenvolvedor Web - SO | 2h | 2h | 43.96 | 43.96 | 43.96 |
| 21 | 1.1.1.3.1.2.2 | WEB - Reunião 2 |  | 1h | 2019-02-22 10:30 A | 2019-02-22 11:30 A | 20 | 100% |  | 2019-02-22 10:30 | 2019-02-22 11:30 | 1h |  |  | Desenvolvedor Web - KS; Desenvolvedor Web - SO | 2h | 2h | 43.96 | 43.96 | 43.96 |
| 22 | 1.1.1.3.1.2.3 | Mobile |  | 1h | 2019-02-25 07:30 A | 2019-02-25 08:30 A | 21 | 100% |  | 2019-02-25 07:30 | 2019-02-25 08:30 | 1h |  |  | Desenvolvedor Mobile - KS | 1h | 1h | 26.41 | 26.41 | 26.41 |
| 23 | 1.1.1.3.1.2.4 | Desktop |  | 1h | 2019-02-25 08:30 A | 2019-02-25 09:30 A | 22 | 100% |  | 2019-02-25 08:30 | 2019-02-25 09:30 | 1h |  |  | Desenvolvedor Mobile - KS | 1h | 1h | 26.41 | 26.41 | 26.41 |
| 24 | 1.1.2 | **Documentação** |  | 2.75d | 2019-02-25 09:30 A | 2019-03-06 11:30 | 3 | 47% | 1.47d | 2019-02-25 09:30 | 2019-03-06 11:30 | 2.75d | 5.75d |  |  | 155h | 75h | 3,681.26 | 3,681.26 | 1,869.86 |
| 25 | 1.1.2.1 | WBS |  | 5h | 2019-02-25 09:30 | 2019-02-27 10:30 |  |  |  | 2019-02-25 09:30 | 2019-02-27 10:30 | 5h | 6.62d | 0d | Supervisor de Desenvolvimento - EM | 5h |  | 162.9 | 162.9 |  |

Notes:
- 14: Foi feita ATAs de todos os três modulos.
- 19: essa parte é onde foi feito por escrito o levantamento de requisitos com as perguntas feitas pela equipe e a resposta do cliente.

| ID | WBS | Task | Duration | Start | Finish | Predecessors | Complete | Remaining | Baseline start | Baseline finish | Baseline duration | Total slack | Resources | Work | Actual work | Cost | Baseline cost | Actual cost |
| --- | --- | --- | --- | --- | --- | --- | --- | --- | --- | --- | --- | --- | --- | --- | --- | --- | --- | --- |
| 26 | 1.1.2.2 | **UML** | 2.25d | 2019-02-25 09:30 A | 2019-03-04 11:30 A |  | 100% |  | 2019-02-25 09:30 | 2019-03-04 11:30 | 2.25d |  |  | 53h | 53h | 1,277.6 | 1,277.6 | 1,277.6 |
| 27 | 1.1.2.2.1 | Diagrama de Uso | 8h | 2019-02-25 09:30 A | 2019-02-28 09:30 A |  | 100% |  | 2019-02-25 09:30 | 2019-02-28 09:30 | 8h |  | Desenvolvedor Desktop - KS; Desenvolvedor Desktop - SO; Desenvolvedor Mobile - IF; Desenvolvedor Web - EM; Desenvolvedor Web - LC | 33h | 33h | 838 | 838 | 838 |
| 28 | 1.1.2.2.2 | Diagrama de Classe | 10h | 2019-02-28 09:30 A | 2019-03-04 11:30 A | 27 | 100% |  | 2019-02-28 09:30 | 2019-03-04 11:30 | 10h |  | Desenvolvedor Web - KS; Desenvolvedor Web - SO | 20h | 20h | 439.6 | 439.6 | 439.6 |
| 29 | 1.1.2.3 | Manual do usuário | 10h | 2019-02-27 10:30 | 2019-03-04 08:30 | 25 |  |  | 2019-02-27 10:30 | 2019-03-04 08:30 | 10h | 6.62d | Desenvolvedor Web - EM; Desenvolvedor Web - IF; Desenvolvedor Web - KS; Desenvolvedor Web - LC; Desenvolvedor Web - SO | 50h |  | 1,099 | 1,099 |  |
| 30 | 1.1.2.4 | Embasamento teórico | 20h | 2019-02-25 09:30 | 2019-03-06 09:30 |  |  |  | 2019-02-25 09:30 | 2019-03-06 09:30 | 20h | 6d | Desenvolvedor Web - SO | 20h |  | 439.6 | 439.6 |  |
| 31 | 1.1.2.5 | Aceite do Cliente | 2h | 2019-03-06 09:30 A | 2019-03-06 11:30 A | 30 | 100% |  | 2019-03-06 09:30 | 2019-03-06 11:30 | 2h |  | Desenvolvedor Web - SO | 2h | 2h | 43.96 | 43.96 | 43.96 |
| 32 | 1.1.2.6 | Escopo do Projeto | 5h | 2019-02-25 09:30 A | 2019-02-27 10:30 A |  | 100% |  | 2019-02-25 09:30 | 2019-02-27 10:30 | 5h |  | Desenvolvedor Web - EM; Desenvolvedor Web - SO | 10h | 10h | 219.8 | 219.8 | 219.8 |
| 33 | 1.1.2.7 | Escopo do Produto | 5h | 2019-02-27 10:30 | 2019-02-28 11:30 | 32 |  |  | 2019-02-27 10:30 | 2019-02-28 11:30 | 5h | 7.25d | Desenvolvedor Web - SO | 5h |  | 109.9 | 109.9 |  |
| 34 | 1.1.2.8 | Dicionário de Dados | 10h | 2019-02-25 09:30 A | 2019-02-28 11:30 A |  | 100% |  | 2019-02-25 09:30 | 2019-02-28 11:30 | 10h |  | Administrador de Banco de Dados - SO | 10h | 10h | 328.5 | 328.5 | 328.5 |
| 35 | 1.1.3 | **Wireframes** | 8.5d | 2019-02-25 09:30 A | 2019-03-27 09:30 | 3 | 51% | 4.13d | 2019-02-25 09:30 | 2019-03-27 09:30 | 8.5d | 0d |  | 103h | 53h | 2,505.58 | 2,505.58 | 1,406.58 |
| 36 | 1.1.3.1 | **WEB** | 8.5d | 2019-02-25 09:30 A | 2019-03-27 09:30 |  | 29% | 6.07d | 2019-02-25 09:30 | 2019-03-27 09:30 | 8.5d | 0d |  | 70h | 20h | 1,538.6 | 1,538.6 | 439.6 |
| 37 | 1.1.3.1.1 | **Site** | 2.5d | 2019-02-25 09:30 A | 2019-03-06 09:30 A |  | 100% |  | 2019-02-25 09:30 | 2019-03-06 09:30 | 2.5d |  |  | 20h | 20h | 439.6 | 439.6 | 439.6 |
| 38 | 1.1.3.1.1.1 | Index | 2h | 2019-02-25 09:30 A | 2019-02-25 11:30 A |  | 100% |  | 2019-02-25 09:30 | 2019-02-25 11:30 | 2h |  | Desenvolvedor Web - EM | 2h | 2h | 43.96 | 43.96 | 43.96 |
| 39 | 1.1.3.1.1.2 | Anuncios | 2h | 2019-02-27 07:30 A | 2019-02-27 09:30 A | 38 | 100% |  | 2019-02-27 07:30 | 2019-02-27 09:30 | 2h |  | Desenvolvedor Web - EM | 2h | 2h | 43.96 | 43.96 | 43.96 |
| 40 | 1.1.3.1.1.3 | Parceiros | 2h | 2019-02-27 09:30 A | 2019-02-27 11:30 A | 39 | 100% |  | 2019-02-27 09:30 | 2019-02-27 11:30 | 2h |  | Desenvolvedor Web - EM | 2h | 2h | 43.96 | 43.96 | 43.96 |
| 41 | 1.1.3.1.1.4 | Como Funciona | 2h | 2019-02-28 07:30 A | 2019-02-28 09:30 A | 40 | 100% |  | 2019-02-28 07:30 | 2019-02-28 09:30 | 2h |  | Desenvolvedor Web - EM | 2h | 2h | 43.96 | 43.96 | 43.96 |
| 42 | 1.1.3.1.1.5 | Duvidas Frequentes | 2h | 2019-02-28 09:30 A | 2019-02-28 11:30 A | 41 | 100% |  | 2019-02-28 09:30 | 2019-02-28 11:30 | 2h |  | Desenvolvedor Web - EM | 2h | 2h | 43.96 | 43.96 | 43.96 |
| 43 | 1.1.3.1.1.6 | Fale Conosco | 2h | 2019-03-01 07:30 A | 2019-03-01 09:30 A | 42 | 100% |  | 2019-03-01 07:30 | 2019-03-01 09:30 | 2h |  | Desenvolvedor Web - EM | 2h | 2h | 43.96 | 43.96 | 43.96 |
| 44 | 1.1.3.1.1.7 | Login | 2h | 2019-03-01 09:30 A | 2019-03-01 11:30 A | 43 | 100% |  | 2019-03-01 09:30 | 2019-03-01 11:30 | 2h |  | Desenvolvedor Web - EM | 2h | 2h | 43.96 | 43.96 | 43.96 |
| 45 | 1.1.3.1.1.8 | Cadastro | 2h | 2019-03-04 07:30 A | 2019-03-04 09:30 A | 44 | 100% |  | 2019-03-04 07:30 | 2019-03-04 09:30 | 2h |  | Desenvolvedor Web - EM | 2h | 2h | 43.96 | 43.96 | 43.96 |
| 46 | 1.1.3.1.1.9 | Avaliações do Mês | 2h | 2019-03-04 09:30 A | 2019-03-04 11:30 A | 45 | 100% |  | 2019-03-04 09:30 | 2019-03-04 11:30 | 2h |  | Desenvolvedor Web - EM | 2h | 2h | 43.96 | 43.96 | 43.96 |
| 47 | 1.1.3.1.1.10 | Termos de Uso | 2h | 2019-03-06 07:30 A | 2019-03-06 09:30 A | 46 | 100% |  | 2019-03-06 07:30 | 2019-03-06 09:30 | 2h |  | Desenvolvedor Web - EM | 2h | 2h | 43.96 | 43.96 | 43.96 |
| 48 | 1.1.3.1.2 | **Painel do Usuário** | 2d | 2019-03-06 09:30 | 2019-03-13 09:30 | 37 |  |  | 2019-03-06 09:30 | 2019-03-13 09:30 | 2d | 0d |  | 16h |  | 351.68 | 351.68 |  |
| 49 | 1.1.3.1.2.1 | Home - Perfil do Usuário | 2h | 2019-03-06 09:30 | 2019-03-06 11:30 |  |  |  | 2019-03-06 09:30 | 2019-03-06 11:30 | 2h | 0d | Desenvolvedor Web - KS | 2h |  | 43.96 | 43.96 |  |
| 50 | 1.1.3.1.2.2 | Cupons de desconto | 2h | 2019-03-07 07:30 | 2019-03-07 09:30 | 49 |  |  | 2019-03-07 07:30 | 2019-03-07 09:30 | 2h | 0d | Desenvolvedor Web - KS | 2h |  | 43.96 | 43.96 |  |
| 51 | 1.1.3.1.2.3 | Histórico de locações | 2h | 2019-03-07 09:30 | 2019-03-07 11:30 | 50 |  |  | 2019-03-07 09:30 | 2019-03-07 11:30 | 2h | 0d | Desenvolvedor Web - KS | 2h |  | 43.96 | 43.96 |  |
| 52 | 1.1.3.1.2.4 | Detalhes da locação (modal) | 2h | 2019-03-08 07:30 | 2019-03-08 09:30 | 51 |  |  | 2019-03-08 07:30 | 2019-03-08 09:30 | 2h | 0d | Desenvolvedor Web - KS | 2h |  | 43.96 | 43.96 |  |
| 53 | 1.1.3.1.2.5 | Meus Veículos | 2h | 2019-03-08 09:30 | 2019-03-08 11:30 | 52 |  |  | 2019-03-08 09:30 | 2019-03-08 11:30 | 2h | 0d | Desenvolvedor Web - KS | 2h |  | 43.96 | 43.96 |  |
| 54 | 1.1.3.1.2.6 | Vendas de veículos | 2h | 2019-03-11 07:30 | 2019-03-11 09:30 | 53 |  |  | 2019-03-11 07:30 | 2019-03-11 09:30 | 2h | 0d | Desenvolvedor Web - KS | 2h |  | 43.96 | 43.96 |  |
| 55 | 1.1.3.1.2.7 | Edição dos dados do perfil | 2h | 2019-03-11 09:30 | 2019-03-11 11:30 | 54 |  |  | 2019-03-11 09:30 | 2019-03-11 11:30 | 2h | 0d | Desenvolvedor Web - KS | 2h |  | 43.96 | 43.96 |  |
| 56 | 1.1.3.1.2.8 | Edição e Cadastro dos veículos | 2h | 2019-03-13 07:30 | 2019-03-13 09:30 | 55 |  |  | 2019-03-13 07:30 | 2019-03-13 09:30 | 2h | 0d | Desenvolvedor Web - KS | 2h |  | 43.96 | 43.96 |  |

| ID | WBS | Task | Duration | Start | Finish | Predecessors | Complete | Baseline start | Baseline finish | Baseline duration | Total slack | Resources | Work | Actual work | Cost | Baseline cost | Actual cost |
| --- | --- | --- | --- | --- | --- | --- | --- | --- | --- | --- | --- | --- | --- | --- | --- | --- | --- |
| 57 | 1.1.3.1.3 | **CMS** | 4d | 2019-03-13 09:30 | 2019-03-27 09:30 | 48 |  | 2019-03-13 09:30 | 2019-03-27 09:30 | 4d | 0d |  | 34h |  | 747.32 | 747.32 |  |
| 58 | 1.1.3.1.3.1 | Home do CMS | 2h | 2019-03-13 09:30 | 2019-03-13 11:30 |  |  | 2019-03-13 09:30 | 2019-03-13 11:30 | 2h | 3.75d | Desenvolvedor Web - SO | 2h |  | 43.96 | 43.96 |  |
| 59 | 1.1.3.1.3.2 | Gerenciamento de funcionários | 2h | 2019-03-27 07:30 | 2019-03-27 09:30 | 60 |  | 2019-03-27 07:30 | 2019-03-27 09:30 | 2h | 0d | Desenvolvedor Web - SO | 2h |  | 43.96 | 43.96 |  |
| 60 | 1.1.3.1.3.3 | Gerenciamento de E-mail Marketing | 2h | 2019-03-25 09:30 | 2019-03-25 11:30 | 61 |  | 2019-03-25 09:30 | 2019-03-25 11:30 | 2h | 0d | Desenvolvedor Web - SO | 2h |  | 43.96 | 43.96 |  |
| 61 | 1.1.3.1.3.4 | Gerenciamento do histórico de locação | 2h | 2019-03-25 07:30 | 2019-03-25 09:30 | 62 |  | 2019-03-25 07:30 | 2019-03-25 09:30 | 2h | 0d | Desenvolvedor Web - SO | 2h |  | 43.96 | 43.96 |  |
| 62 | 1.1.3.1.3.5 | Aprovação de Cancelamento | 2h | 2019-03-22 09:30 | 2019-03-22 11:30 | 63 |  | 2019-03-22 09:30 | 2019-03-22 11:30 | 2h | 0d | Desenvolvedor Web - SO | 2h |  | 43.96 | 43.96 |  |
| 63 | 1.1.3.1.3.6 | Aprovação de Cadastros | 2h | 2019-03-22 07:30 | 2019-03-22 09:30 | 64 |  | 2019-03-22 07:30 | 2019-03-22 09:30 | 2h | 0d | Desenvolvedor Web - SO | 2h |  | 43.96 | 43.96 |  |
| 64 | 1.1.3.1.3.7 | Relatório | 2h | 2019-03-21 09:30 | 2019-03-21 11:30 | 65 |  | 2019-03-21 09:30 | 2019-03-21 11:30 | 2h | 0d | Desenvolvedor Web - SO | 2h |  | 43.96 | 43.96 |  |
| 65 | 1.1.3.1.3.8 | **Administração das páginas do Site** | 2.5d | 2019-03-13 09:30 | 2019-03-21 09:30 |  |  | 2019-03-13 09:30 | 2019-03-21 09:30 | 2.5d | 0d |  | 20h |  | 439.6 | 439.6 |  |
| 66 | 1.1.3.1.3.8.1 | Index | 2h | 2019-03-13 09:30 | 2019-03-13 11:30 |  |  | 2019-03-13 09:30 | 2019-03-13 11:30 | 2h | 0d | Desenvolvedor Web - SO | 2h |  | 43.96 | 43.96 |  |
| 67 | 1.1.3.1.3.8.2 | Anuncios | 2h | 2019-03-14 07:30 | 2019-03-14 09:30 | 66 |  | 2019-03-14 07:30 | 2019-03-14 09:30 | 2h | 0d | Desenvolvedor Web - SO | 2h |  | 43.96 | 43.96 |  |
| 68 | 1.1.3.1.3.8.3 | Parceiros | 2h | 2019-03-14 09:30 | 2019-03-14 11:30 | 67 |  | 2019-03-14 09:30 | 2019-03-14 11:30 | 2h | 0d | Desenvolvedor Web - SO | 2h |  | 43.96 | 43.96 |  |
| 69 | 1.1.3.1.3.8.4 | Como Funciona | 2h | 2019-03-15 07:30 | 2019-03-15 09:30 | 68 |  | 2019-03-15 07:30 | 2019-03-15 09:30 | 2h | 0d | Desenvolvedor Web - SO | 2h |  | 43.96 | 43.96 |  |
| 70 | 1.1.3.1.3.8.5 | Duvidas Frequentes | 2h | 2019-03-15 09:30 | 2019-03-15 11:30 | 69 |  | 2019-03-15 09:30 | 2019-03-15 11:30 | 2h | 0d | Desenvolvedor Web - SO | 2h |  | 43.96 | 43.96 |  |
| 71 | 1.1.3.1.3.8.6 | Fale Conosco | 2h | 2019-03-18 07:30 | 2019-03-18 09:30 | 70 |  | 2019-03-18 07:30 | 2019-03-18 09:30 | 2h | 0d | Desenvolvedor Web - SO | 2h |  | 43.96 | 43.96 |  |
| 72 | 1.1.3.1.3.8.7 | Login | 2h | 2019-03-18 09:30 | 2019-03-18 11:30 | 71 |  | 2019-03-18 09:30 | 2019-03-18 11:30 | 2h | 0d | Desenvolvedor Web - SO | 2h |  | 43.96 | 43.96 |  |
| 73 | 1.1.3.1.3.8.8 | Cadastro | 2h | 2019-03-20 07:30 | 2019-03-20 09:30 | 72 |  | 2019-03-20 07:30 | 2019-03-20 09:30 | 2h | 0d | Desenvolvedor Web - SO | 2h |  | 43.96 | 43.96 |  |
| 74 | 1.1.3.1.3.8.9 | Avaliações do Mês | 2h | 2019-03-20 09:30 | 2019-03-20 11:30 | 73 |  | 2019-03-20 09:30 | 2019-03-20 11:30 | 2h | 0d | Desenvolvedor Web - SO | 2h |  | 43.96 | 43.96 |  |
| 75 | 1.1.3.1.3.8.10 | Termos de Uso | 2h | 2019-03-21 07:30 | 2019-03-21 09:30 | 74 |  | 2019-03-21 07:30 | 2019-03-21 09:30 | 2h | 0d | Desenvolvedor Web - SO | 2h |  | 43.96 | 43.96 |  |
| 76 | 1.1.3.2 | **DESKTOP** | 2.62d | 2019-02-25 09:30 A | 2019-03-06 10:30 A |  | 100% | 2019-02-25 09:30 | 2019-03-06 10:30 | 2.62d |  |  | 23h | 23h | 702.88 | 702.88 | 702.88 |
| 77 | 1.1.3.2.1 | Login | 1h | 2019-02-25 09:30 A | 2019-02-25 10:30 A |  | 100% | 2019-02-25 09:30 | 2019-02-25 10:30 | 1h |  | Desenvolvedor Desktop - EM | 1h | 1h | 30.56 | 30.56 | 30.56 |
| 78 | 1.1.3.2.2 | Home | 1h | 2019-02-25 10:30 A | 2019-02-25 11:30 A | 77 | 100% | 2019-02-25 10:30 | 2019-02-25 11:30 | 1h |  | Desenvolvedor Desktop - EM | 1h | 1h | 30.56 | 30.56 | 30.56 |
| 79 | 1.1.3.2.3 | Gerenciar banco - cadastrar banco | 1h | 2019-02-27 07:30 A | 2019-02-27 08:30 A | 78 | 100% | 2019-02-27 07:30 | 2019-02-27 08:30 | 1h |  | Desenvolvedor Desktop - EM | 1h | 1h | 30.56 | 30.56 | 30.56 |
| 80 | 1.1.3.2.4 | Gerenciar banco - listar bancos | 1h | 2019-02-27 08:30 A | 2019-02-27 09:30 A | 79 | 100% | 2019-02-27 08:30 | 2019-02-27 09:30 | 1h |  | Desenvolvedor Desktop - EM | 1h | 1h | 30.56 | 30.56 | 30.56 |
| 81 | 1.1.3.2.5 | Gerenciar banco - cad/listar | 1h | 2019-02-27 09:30 A | 2019-02-27 10:30 A | 80 | 100% | 2019-02-27 09:30 | 2019-02-27 10:30 | 1h |  | Desenvolvedor Desktop - EM | 1h | 1h | 30.56 | 30.56 | 30.56 |
| 82 | 1.1.3.2.6 | Gerenciar fornecedores - cadastrar fornecedores | 1h | 2019-02-27 10:30 A | 2019-02-27 11:30 A | 81 | 100% | 2019-02-27 10:30 | 2019-02-27 11:30 | 1h |  | Desenvolvedor Desktop - EM | 1h | 1h | 30.56 | 30.56 | 30.56 |
| 83 | 1.1.3.2.7 | Gerenciar Fornecedores - listar fornecedores | 1h | 2019-02-28 07:30 A | 2019-02-28 08:30 A | 82 | 100% | 2019-02-28 07:30 | 2019-02-28 08:30 | 1h |  | Desenvolvedor Desktop - EM | 1h | 1h | 30.56 | 30.56 | 30.56 |
| 84 | 1.1.3.2.8 | Gerenciar Fornecedores - cad/listar | 1h | 2019-02-28 08:30 A | 2019-02-28 09:30 A | 83 | 100% | 2019-02-28 08:30 | 2019-02-28 09:30 | 1h |  | Desenvolvedor Desktop - EM | 1h | 1h | 30.56 | 30.56 | 30.56 |
| 85 | 1.1.3.2.9 | Gerenciar Produtos - cadastrar produto | 1h | 2019-02-28 09:30 A | 2019-02-28 10:30 A | 84 | 100% | 2019-02-28 09:30 | 2019-02-28 10:30 | 1h |  | Desenvolvedor Desktop - EM | 1h | 1h | 30.56 | 30.56 | 30.56 |
| 86 | 1.1.3.2.10 | Gerenciar Produtos - listar produtos | 1h | 2019-02-28 10:30 A | 2019-02-28 11:30 A | 85 | 100% | 2019-02-28 10:30 | 2019-02-28 11:30 | 1h |  | Desenvolvedor Desktop - EM | 1h | 1h | 30.56 | 30.56 | 30.56 |
| 87 | 1.1.3.2.11 | Gerenciar Produtos - cad/listar | 1h | 2019-03-01 07:30 A | 2019-03-01 08:30 A | 86 | 100% | 2019-03-01 07:30 | 2019-03-01 08:30 | 1h |  | Desenvolvedor Desktop - EM | 1h | 1h | 30.56 | 30.56 | 30.56 |
| 88 | 1.1.3.2.12 | Gerenciar Usuários - cadastrar usuário | 1h | 2019-03-01 08:30 A | 2019-03-01 09:30 A | 87 | 100% | 2019-03-01 08:30 | 2019-03-01 09:30 | 1h |  | Desenvolvedor Desktop - EM | 1h | 1h | 30.56 | 30.56 | 30.56 |
| 89 | 1.1.3.2.13 | Gerenciar Usuários - listar usuários | 1h | 2019-03-01 09:30 A | 2019-03-01 10:30 A | 88 | 100% | 2019-03-01 09:30 | 2019-03-01 10:30 | 1h |  | Desenvolvedor Desktop - EM | 1h | 1h | 30.56 | 30.56 | 30.56 |
| 90 | 1.1.3.2.14 | Gerenciar Usuários - cad/listar | 1h | 2019-03-01 10:30 A | 2019-03-01 11:30 A | 89 | 100% | 2019-03-01 10:30 | 2019-03-01 11:30 | 1h |  | Desenvolvedor Desktop - EM | 1h | 1h | 30.56 | 30.56 | 30.56 |
| 91 | 1.1.3.2.15 | Contas A Pagar - Listar contas | 1h | 2019-03-04 07:30 A | 2019-03-04 08:30 A | 90 | 100% | 2019-03-04 07:30 | 2019-03-04 08:30 | 1h |  | Desenvolvedor Desktop - EM | 1h | 1h | 30.56 | 30.56 | 30.56 |
| 92 | 1.1.3.2.16 | Contas A Pagar - Visualizar conta | 1h | 2019-03-04 08:30 A | 2019-03-04 09:30 A | 91 | 100% | 2019-03-04 08:30 | 2019-03-04 09:30 | 1h |  | Desenvolvedor Desktop - EM | 1h | 1h | 30.56 | 30.56 | 30.56 |
| 93 | 1.1.3.2.17 | Contas A Receber - Listar contas | 1h | 2019-03-04 09:30 A | 2019-03-04 10:30 A | 92 | 100% | 2019-03-04 09:30 | 2019-03-04 10:30 | 1h |  | Desenvolvedor Desktop - EM | 1h | 1h | 30.56 | 30.56 | 30.56 |
| 94 | 1.1.3.2.18 | Contas A Receber - Visualizar contas | 1h | 2019-03-04 10:30 A | 2019-03-04 11:30 A | 93 | 100% | 2019-03-04 10:30 | 2019-03-04 11:30 | 1h |  | Desenvolvedor Desktop - EM | 1h | 1h | 30.56 | 30.56 | 30.56 |
| 95 | 1.1.3.2.19 | Pedidos de Compra - Cadastro do pedido | 1h | 2019-03-06 07:30 A | 2019-03-06 08:30 A | 94 | 100% | 2019-03-06 07:30 | 2019-03-06 08:30 | 1h |  | Desenvolvedor Desktop - EM | 1h | 1h | 30.56 | 30.56 | 30.56 |
| 96 | 1.1.3.2.20 | Pedidos de Compra - Listar pedidos | 1h | 2019-03-06 08:30 A | 2019-03-06 09:30 A | 95 | 100% | 2019-03-06 08:30 | 2019-03-06 09:30 | 1h |  | Desenvolvedor Desktop - EM | 1h | 1h | 30.56 | 30.56 | 30.56 |
| 97 | 1.1.3.2.21 | Pedidos de Compra - cad/listar | 1h | 2019-03-06 09:30 A | 2019-03-06 10:30 A | 96 | 100% | 2019-03-06 09:30 | 2019-03-06 10:30 | 1h |  | Desenvolvedor Desktop - EM | 1h | 1h | 30.56 | 30.56 | 30.56 |
| 98 | 1.1.3.2.22 | Relatórios - Listar relatórios | 1h | 2019-03-04 08:30 A | 2019-03-04 09:30 A | 91 | 100% | 2019-03-04 08:30 | 2019-03-04 09:30 | 1h |  | Desenvolvedor Desktop - EM | 1h | 1h | 30.56 | 30.56 | 30.56 |
| 99 | 1.1.3.2.23 | Relatórios - visualizar | 1h | 2019-03-04 09:30 A | 2019-03-04 10:30 A | 98 | 100% | 2019-03-04 09:30 | 2019-03-04 10:30 | 1h |  | Desenvolvedor Desktop - EM | 1h | 1h | 30.56 | 30.56 | 30.56 |

Notes:
- 81: Página onde usuário pode escolher entre cadastrar um novo banco ou listar os bancos cadastrados

| ID | WBS | Task | Duration | Start | Finish | Predecessors | Complete | Remaining | Baseline start | Baseline finish | Baseline duration | Total slack | Free slack | Resources | Work | Actual work | Cost | Baseline cost | Actual cost |
| --- | --- | --- | --- | --- | --- | --- | --- | --- | --- | --- | --- | --- | --- | --- | --- | --- | --- | --- | --- |
| 100 | 1.1.3.3 | **MOBILE** | 1.25d | 2019-02-25 09:30 A | 2019-02-28 11:30 A |  | 100% |  | 2019-02-25 09:30 | 2019-02-28 11:30 | 1.25d |  |  |  | 10h | 10h | 264.1 | 264.1 | 264.1 |
| 101 | 1.1.3.3.1 | Login | 2h | 2019-02-25 09:30 A | 2019-02-25 11:30 A |  | 100% |  | 2019-02-25 09:30 | 2019-02-25 11:30 | 2h |  |  | Desenvolvedor Mobile - IF | 2h | 2h | 52.82 | 52.82 | 52.82 |
| 102 | 1.1.3.3.2 | Busca de veículo | 2h | 2019-02-27 07:30 A | 2019-02-27 09:30 A | 101 | 100% |  | 2019-02-27 07:30 | 2019-02-27 09:30 | 2h |  |  | Desenvolvedor Mobile - IF | 2h | 2h | 52.82 | 52.82 | 52.82 |
| 103 | 1.1.3.3.3 | Localização | 2h | 2019-02-27 09:30 A | 2019-02-27 11:30 A | 102 | 100% |  | 2019-02-27 09:30 | 2019-02-27 11:30 | 2h |  |  | Desenvolvedor Mobile - IF | 2h | 2h | 52.82 | 52.82 | 52.82 |
| 104 | 1.1.3.3.4 | Dados do Usuário | 2h | 2019-02-28 07:30 A | 2019-02-28 09:30 A | 103 | 100% |  | 2019-02-28 07:30 | 2019-02-28 09:30 | 2h |  |  | Desenvolvedor Mobile - IF | 2h | 2h | 52.82 | 52.82 | 52.82 |
| 105 | 1.1.3.3.5 | Dados do Veículo | 2h | 2019-02-28 09:30 A | 2019-02-28 11:30 A | 104 | 100% |  | 2019-02-28 09:30 | 2019-02-28 11:30 | 2h |  |  | Desenvolvedor Mobile - IF | 2h | 2h | 52.82 | 52.82 | 52.82 |
| 106 | 1.2 | **DESENVOLVIMENTO** | 29d | 2019-03-27 09:30 A | 2019-07-05 09:30 | 2 | 22% | 22.76d | 2019-03-27 09:30 | 2019-07-05 09:30 | 29d | 0d |  |  | 850h | 189h | 22,589.2 | 22,589.2 | 5,045.56 |
| 107 | 1.2.1 | **Banco de Dados** | 7.75d | 2019-03-27 09:30 A | 2019-04-22 11:30 A |  | 100% |  | 2019-03-27 09:30 | 2019-04-22 11:30 | 7.75d |  |  |  | 82h | 82h | 2,693.7 | 2,693.7 | 2,693.7 |
| 108 | 1.2.1.1 | Modelo Lógico | 20h | 2019-03-27 09:30 A | 2019-04-04 09:30 A |  | 100% |  | 2019-03-27 09:30 | 2019-04-04 09:30 | 20h |  |  | Administrador de Banco de Dados - IF; Administrador de Banco de Dados - LC | 40h | 40h | 1,314 | 1,314 | 1,314 |
| 109 | 1.2.1.2 | Modelo Conceitual | 40h | 2019-04-04 09:30 A | 2019-04-22 09:30 A | 108 | 100% |  | 2019-04-04 09:30 | 2019-04-22 09:30 | 40h |  |  | Administrador de Banco de Dados - LC | 40h | 40h | 1,314 | 1,314 | 1,314 |
| 110 | 1.2.1.3 | Modelo Físico | 2h | 2019-04-22 09:30 A | 2019-04-22 11:30 A | 109 | 100% |  | 2019-04-22 09:30 | 2019-04-22 11:30 | 2h |  |  | Administrador de Banco de Dados - LC | 2h | 2h | 65.7 | 65.7 | 65.7 |
| 111 | 1.2.2 | **Web** | 12.25d | 2019-04-24 07:30 A | 2019-06-05 09:30 | 107 | 28% | 8.79d | 2019-04-24 07:30 | 2019-06-05 09:30 | 12.25d | 0d |  |  | 372h | 107h | 8,291.74 | 8,291.74 | 2,351.86 |
| 112 | 1.2.2.1 | **Site** | 12.25d | 2019-04-24 07:30 A | 2019-06-05 09:30 |  | 34% | 8.12d | 2019-04-24 07:30 | 2019-06-05 09:30 | 12.25d | 0d |  |  | 98h | 33h | 2,189.48 | 2,189.48 | 725.34 |
| 113 | 1.2.2.1.1 | **Index** | 0.88d | 2019-04-24 07:30 A | 2019-04-25 10:30 A |  | 100% |  | 2019-04-24 07:30 | 2019-04-25 10:30 | 0.88d |  |  |  | 7h | 7h | 153.86 | 153.86 | 153.86 |
| 114 | 1.2.2.1.1.1 | Front End | 2h | 2019-04-24 07:30 A | 2019-04-24 09:30 A |  | 100% |  | 2019-04-24 07:30 | 2019-04-24 09:30 | 2h |  |  | Desenvolvedor Web - EM | 2h | 2h | 43.96 | 43.96 | 43.96 |
| 115 | 1.2.2.1.1.2 | Back End | 5h | 2019-04-24 09:30 A | 2019-04-25 10:30 A | 114 | 100% |  | 2019-04-24 09:30 | 2019-04-25 10:30 | 5h |  |  | Desenvolvedor Web - LC | 5h | 5h | 109.9 | 109.9 | 109.9 |
| 116 | 1.2.2.1.2 | **Anuncios** | 1.25d | 2019-04-26 09:30 A | 2019-05-01 11:30 | 113 | 91% | 0.11d | 2019-04-26 09:30 | 2019-05-01 11:30 | 1.25d | 0d |  |  | 11h | 10h | 241.78 | 241.78 | 219.8 |
| 117 | 1.2.2.1.2.1 | Front End | 3h | 2019-04-26 09:30 A | 2019-04-29 08:30 |  | 67% | 1h | 2019-04-26 09:30 | 2019-04-29 08:30 | 3h | 0.88d |  | Desenvolvedor Web - EM | 3h | 2h | 65.94 | 65.94 | 43.96 |
| 118 | 1.2.2.1.2.2 | Back End | 8h | 2019-04-29 07:30 A | 2019-05-01 11:30 A | 117 | 100% |  | 2019-04-29 07:30 | 2019-05-01 11:30 | 8h |  |  | Desenvolvedor Web - LC | 8h | 8h | 175.84 | 175.84 | 175.84 |
| 119 | 1.2.2.1.3 | **Parceiros** | 1.25d | 2019-05-02 07:30 A | 2019-05-06 09:30 | 116 | 20% | 1d | 2019-05-02 07:30 | 2019-05-06 09:30 | 1.25d | 0d |  |  | 10h | 2h | 219.8 | 219.8 | 43.96 |
| 120 | 1.2.2.1.3.1 | Front End | 2h | 2019-05-02 07:30 A | 2019-05-02 09:30 A |  | 100% |  | 2019-05-02 07:30 | 2019-05-02 09:30 | 2h |  |  | Desenvolvedor Web - EM | 2h | 2h | 43.96 | 43.96 | 43.96 |
| 121 | 1.2.2.1.3.2 | Back End | 8h | 2019-05-02 09:30 | 2019-05-06 09:30 | 120 |  |  | 2019-05-02 09:30 | 2019-05-06 09:30 | 8h | 0d |  | Desenvolvedor Web - KS | 8h |  | 175.84 | 175.84 |  |
| 122 | 1.2.2.1.4 | **Como Funciona** | 1.38d | 2019-05-06 09:30 A | 2019-05-10 08:30 | 119 | 18% | 1.12d | 2019-05-06 09:30 | 2019-05-10 08:30 | 1.38d | -0.12d | 0d |  | 11h | 2h | 241.78 | 241.78 | 43.96 |
| 123 | 1.2.2.1.4.1 | Front End | 3h | 2019-05-06 09:30 A | 2019-05-08 08:30 |  | 67% | 1h | 2019-05-06 09:30 | 2019-05-08 08:30 | 3h | -0.12d | 0d | Desenvolvedor Web - EM | 3h | 2h | 65.94 | 65.94 | 43.96 |
| 124 | 1.2.2.1.4.2 | Back End | 8h | 2019-05-08 08:30 | 2019-05-10 08:30 | 123 |  |  | 2019-05-08 08:30 | 2019-05-10 08:30 | 8h | -0.12d | 0d | Desenvolvedor Web - KS | 8h |  | 175.84 | 175.84 |  |

| ID | WBS | Task | Duration | Start | Finish | Predecessors | Complete | Remaining | Baseline start | Baseline finish | Baseline duration | Total slack | Free slack | Resources | Work | Actual work | Cost | Baseline cost | Actual cost |
| --- | --- | --- | --- | --- | --- | --- | --- | --- | --- | --- | --- | --- | --- | --- | --- | --- | --- | --- | --- |
| 125 | 1.2.2.1.5 | **Duvidas Frequentes** | 1.38d | 2019-05-10 07:30 A | 2019-05-15 10:30 | 122 | 18% | 1.12d | 2019-05-10 07:30 | 2019-05-15 10:30 | 1.38d | -0.12d | 0d |  | 11h | 2h | 241.78 | 241.78 | 43.96 |
| 126 | 1.2.2.1.5.1 | Front End | 3h | 2019-05-10 07:30 A | 2019-05-10 10:30 |  | 67% | 1h | 2019-05-10 07:30 | 2019-05-10 10:30 | 3h | -0.12d | 0d | Desenvolvedor Web - EM | 3h | 2h | 65.94 | 65.94 | 43.96 |
| 127 | 1.2.2.1.5.2 | Back End | 8h | 2019-05-10 10:30 | 2019-05-15 10:30 | 126 |  |  | 2019-05-10 10:30 | 2019-05-15 10:30 | 8h | -0.12d | 0d | Desenvolvedor Web - SO | 8h |  | 175.84 | 175.84 |  |
| 128 | 1.2.2.1.6 | **Fale Conosco** | 1.25d | 2019-05-15 09:30 A | 2019-05-17 11:30 | 125 | 20% | 1d | 2019-05-15 09:30 | 2019-05-17 11:30 | 1.25d | 0d |  |  | 10h | 2h | 219.8 | 219.8 | 43.96 |
| 129 | 1.2.2.1.6.1 | Front End | 2h | 2019-05-15 09:30 A | 2019-05-15 11:30 A |  | 100% |  | 2019-05-15 09:30 | 2019-05-15 11:30 | 2h |  |  | Desenvolvedor Web - EM | 2h | 2h | 43.96 | 43.96 | 43.96 |
| 130 | 1.2.2.1.6.2 | Back End | 8h | 2019-05-16 07:30 | 2019-05-17 11:30 | 129 |  |  | 2019-05-16 07:30 | 2019-05-17 11:30 | 8h | 0d |  | Desenvolvedor Web - SO | 8h |  | 175.84 | 175.84 |  |
| 131 | 1.2.2.1.7 | **Login** | 1.25d | 2019-05-20 07:30 A | 2019-05-23 09:30 | 128 | 20% | 1d | 2019-05-20 07:30 | 2019-05-23 09:30 | 1.25d | 0d |  |  | 10h | 2h | 219.8 | 219.8 | 43.96 |
| 132 | 1.2.2.1.7.1 | Front End | 2h | 2019-05-20 07:30 A | 2019-05-20 09:30 A |  | 100% |  | 2019-05-20 07:30 | 2019-05-20 09:30 | 2h |  |  | Desenvolvedor Web - EM | 2h | 2h | 43.96 | 43.96 | 43.96 |
| 133 | 1.2.2.1.7.2 | Back End | 8h | 2019-05-20 09:30 | 2019-05-23 09:30 | 132 |  |  | 2019-05-20 09:30 | 2019-05-23 09:30 | 8h | 0d |  | Desenvolvedor Web - IF | 8h |  | 175.84 | 175.84 |  |
| 134 | 1.2.2.1.8 | **Cadastro** | 1.25d | 2019-05-23 09:30 A | 2019-05-27 11:30 | 131 | 20% | 1d | 2019-05-23 09:30 | 2019-05-27 11:30 | 1.25d | 0d |  |  | 10h | 2h | 219.8 | 219.8 | 43.96 |
| 135 | 1.2.2.1.8.1 | Front End | 2h | 2019-05-23 09:30 A | 2019-05-23 11:30 A |  | 100% |  | 2019-05-23 09:30 | 2019-05-23 11:30 | 2h |  |  | Desenvolvedor Web - EM | 2h | 2h | 43.96 | 43.96 | 43.96 |
| 136 | 1.2.2.1.8.2 | Back End | 8h | 2019-05-24 07:30 | 2019-05-27 11:30 | 135 |  |  | 2019-05-24 07:30 | 2019-05-27 11:30 | 8h | 0d |  | Desenvolvedor Web - IF | 8h |  | 175.84 | 175.84 |  |
| 137 | 1.2.2.1.9 | **Avaliações do Mês** | 1.25d | 2019-05-29 07:30 A | 2019-05-31 09:30 | 134 | 20% | 1d | 2019-05-29 07:30 | 2019-05-31 09:30 | 1.25d | 0d |  |  | 10h | 2h | 255.24 | 255.24 | 43.96 |
| 138 | 1.2.2.1.9.1 | Front End | 2h | 2019-05-29 07:30 A | 2019-05-29 09:30 A |  | 100% |  | 2019-05-29 07:30 | 2019-05-29 09:30 | 2h |  |  | Desenvolvedor Web - EM | 2h | 2h | 43.96 | 43.96 | 43.96 |
| 139 | 1.2.2.1.9.2 | Back End | 8h | 2019-05-29 09:30 | 2019-05-31 09:30 | 138 |  |  | 2019-05-29 09:30 | 2019-05-31 09:30 | 8h | 0d |  | Desenvolvedor Mobile - EM | 8h |  | 211.28 | 211.28 |  |
| 140 | 1.2.2.1.10 | **Termos de Uso** | 1d | 2019-05-31 09:30 A | 2019-06-05 09:30 | 137 | 25% | 0.75d | 2019-05-31 09:30 | 2019-06-05 09:30 | 1d | 0d |  |  | 8h | 2h | 175.84 | 175.84 | 43.96 |
| 141 | 1.2.2.1.10.1 | Front End | 2h | 2019-05-31 09:30 A | 2019-05-31 11:30 A |  | 100% |  | 2019-05-31 09:30 | 2019-05-31 11:30 | 2h |  |  | Desenvolvedor Web - EM | 2h | 2h | 43.96 | 43.96 | 43.96 |
| 142 | 1.2.2.1.10.2 | Back End | 6h | 2019-06-03 07:30 | 2019-06-05 09:30 | 141 |  |  | 2019-06-03 07:30 | 2019-06-05 09:30 | 6h | 0d |  | Desenvolvedor Web - EM | 6h |  | 131.88 | 131.88 |  |
| 143 | 1.2.2.2 | **Painel do Usuário** | 9.25d | 2019-04-24 07:30 | 2019-05-24 09:30 |  |  |  | 2019-04-24 07:30 | 2019-05-24 09:30 | 9.25d | 3d |  |  | 74h |  | 1,626.52 | 1,626.52 |  |
| 144 | 1.2.2.2.1 | **Home - Perfil do Usuário** | 0.5d | 2019-04-24 07:30 | 2019-04-24 11:30 |  |  |  | 2019-04-24 07:30 | 2019-04-24 11:30 | 0.5d | 3d | 0d |  | 4h |  | 87.92 | 87.92 |  |
| 145 | 1.2.2.2.1.1 | Front End | 2h | 2019-04-24 07:30 | 2019-04-24 09:30 |  |  |  | 2019-04-24 07:30 | 2019-04-24 09:30 | 2h | 3d | 0d | Desenvolvedor Web - EM | 2h |  | 43.96 | 43.96 |  |
| 146 | 1.2.2.2.1.2 | Back End | 2h | 2019-04-24 09:30 | 2019-04-24 11:30 | 145 |  |  | 2019-04-24 09:30 | 2019-04-24 11:30 | 2h | 3d |  | Desenvolvedor Web - EM | 2h |  | 43.96 | 43.96 |  |
| 147 | 1.2.2.2.2 | **Cupons de desconto** | 1.25d | 2019-04-25 07:30 | 2019-04-29 09:30 | 144 |  |  | 2019-04-25 07:30 | 2019-04-29 09:30 | 1.25d | 3d | 0d |  | 10h |  | 219.8 | 219.8 |  |
| 148 | 1.2.2.2.2.1 | Front End | 2h | 2019-04-25 07:30 | 2019-04-25 09:30 |  |  |  | 2019-04-25 07:30 | 2019-04-25 09:30 | 2h | 3d | 0d | Desenvolvedor Web - SO | 2h |  | 43.96 | 43.96 |  |
| 149 | 1.2.2.2.2.2 | Back End | 8h | 2019-04-25 09:30 | 2019-04-29 09:30 | 148 |  |  | 2019-04-25 09:30 | 2019-04-29 09:30 | 8h | 3d |  | Desenvolvedor Web - SO | 8h |  | 175.84 | 175.84 |  |

| ID | WBS | Task | Duration | Start | Finish | Predecessors | Complete | Remaining | Baseline start | Baseline finish | Baseline duration | Total slack | Free slack | Resources | Work | Actual work | Cost | Baseline cost | Actual cost |
| --- | --- | --- | --- | --- | --- | --- | --- | --- | --- | --- | --- | --- | --- | --- | --- | --- | --- | --- | --- |
| 150 | 1.2.2.2.3 | **Histórico de locações** | 1.25d | 2019-04-29 09:30 | 2019-05-02 11:30 | 147 |  |  | 2019-04-29 09:30 | 2019-05-02 11:30 | 1.25d | 3d | 0d |  | 10h |  | 219.8 | 219.8 |  |
| 151 | 1.2.2.2.3.1 | Front End | 2h | 2019-04-29 09:30 | 2019-04-29 11:30 |  |  |  | 2019-04-29 09:30 | 2019-04-29 11:30 | 2h | 3d | 0d | Desenvolvedor Web - LC | 2h |  | 43.96 | 43.96 |  |
| 152 | 1.2.2.2.3.2 | Back End | 8h | 2019-05-01 07:30 | 2019-05-02 11:30 | 151 |  |  | 2019-05-01 07:30 | 2019-05-02 11:30 | 8h | 3d |  | Desenvolvedor Web - LC | 8h |  | 175.84 | 175.84 |  |
| 153 | 1.2.2.2.4 | **Detalhes da locação (modal)** | 1.25d | 2019-05-03 07:30 | 2019-05-08 09:30 | 150 |  |  | 2019-05-03 07:30 | 2019-05-08 09:30 | 1.25d | 3d | 0d |  | 10h |  | 219.8 | 219.8 |  |
| 154 | 1.2.2.2.4.1 | Front End | 2h | 2019-05-03 07:30 | 2019-05-03 09:30 |  |  |  | 2019-05-03 07:30 | 2019-05-03 09:30 | 2h | 3d | 0d | Desenvolvedor Web - LC | 2h |  | 43.96 | 43.96 |  |
| 155 | 1.2.2.2.4.2 | Back End | 8h | 2019-05-03 09:30 | 2019-05-08 09:30 | 154 |  |  | 2019-05-03 09:30 | 2019-05-08 09:30 | 8h | 3d |  | Desenvolvedor Web - LC | 8h |  | 175.84 | 175.84 |  |
| 156 | 1.2.2.2.5 | **Meus Veículos** | 1.25d | 2019-05-08 09:30 | 2019-05-10 11:30 | 153 |  |  | 2019-05-08 09:30 | 2019-05-10 11:30 | 1.25d | 3d | 0d |  | 10h |  | 219.8 | 219.8 |  |
| 157 | 1.2.2.2.5.1 | Front End | 2h | 2019-05-08 09:30 | 2019-05-08 11:30 |  |  |  | 2019-05-08 09:30 | 2019-05-08 11:30 | 2h | 3d | 0d | Desenvolvedor Web - KS | 2h |  | 43.96 | 43.96 |  |
| 158 | 1.2.2.2.5.2 | Back End | 8h | 2019-05-09 07:30 | 2019-05-10 11:30 | 157 |  |  | 2019-05-09 07:30 | 2019-05-10 11:30 | 8h | 3d |  | Desenvolvedor Web - KS | 8h |  | 175.84 | 175.84 |  |
| 159 | 1.2.2.2.6 | **Vendas de veículos** | 1.25d | 2019-05-13 07:30 | 2019-05-16 09:30 | 156 |  |  | 2019-05-13 07:30 | 2019-05-16 09:30 | 1.25d | 3d | 0d |  | 10h |  | 219.8 | 219.8 |  |
| 160 | 1.2.2.2.6.1 | Front End | 2h | 2019-05-13 07:30 | 2019-05-13 09:30 |  |  |  | 2019-05-13 07:30 | 2019-05-13 09:30 | 2h | 3d | 0d | Desenvolvedor Web - KS | 2h |  | 43.96 | 43.96 |  |
| 161 | 1.2.2.2.6.2 | Back End | 8h | 2019-05-13 09:30 | 2019-05-16 09:30 | 160 |  |  | 2019-05-13 09:30 | 2019-05-16 09:30 | 8h | 3d |  | Desenvolvedor Web - KS | 8h |  | 175.84 | 175.84 |  |
| 162 | 1.2.2.2.7 | **Edição dos dados do perfil** | 1.25d | 2019-05-16 09:30 | 2019-05-20 11:30 | 159 |  |  | 2019-05-16 09:30 | 2019-05-20 11:30 | 1.25d | 3d | 0d |  | 10h |  | 219.8 | 219.8 |  |
| 163 | 1.2.2.2.7.1 | Front End | 2h | 2019-05-16 09:30 | 2019-05-16 11:30 |  |  |  | 2019-05-16 09:30 | 2019-05-16 11:30 | 2h | 3d | 0d | Desenvolvedor Web - IF | 2h |  | 43.96 | 43.96 |  |
| 164 | 1.2.2.2.7.2 | Back End | 8h | 2019-05-17 07:30 | 2019-05-20 11:30 | 163 |  |  | 2019-05-17 07:30 | 2019-05-20 11:30 | 8h | 3d |  | Desenvolvedor Web - IF | 8h |  | 175.84 | 175.84 |  |
| 165 | 1.2.2.2.8 | **Edição e Cadastro dos veículos** | 1.25d | 2019-05-22 07:30 | 2019-05-24 09:30 | 162 |  |  | 2019-05-22 07:30 | 2019-05-24 09:30 | 1.25d | 3d |  |  | 10h |  | 219.8 | 219.8 |  |
| 166 | 1.2.2.2.8.1 | Front End | 2h | 2019-05-22 07:30 | 2019-05-22 09:30 |  |  |  | 2019-05-22 07:30 | 2019-05-22 09:30 | 2h | 3d | 0d | Desenvolvedor Web - SO | 2h |  | 43.96 | 43.96 |  |
| 167 | 1.2.2.2.8.2 | Back End | 8h | 2019-05-22 09:30 | 2019-05-24 09:30 | 166 |  |  | 2019-05-22 09:30 | 2019-05-24 09:30 | 8h | 3d |  | Desenvolvedor Web - SO | 8h |  | 175.84 | 175.84 |  |
| 168 | 1.2.2.3 | **CMS** | 9.88d | 2019-04-24 07:30 A | 2019-05-27 10:30 |  | 37% | 6.21d | 2019-04-24 07:30 | 2019-05-27 10:30 | 9.88d | 2.38d |  |  | 200h | 74h | 4,475.74 | 4,475.74 | 1,626.52 |
| 169 | 1.2.2.3.1 | Autenticação | 10h | 2019-04-24 07:30 A | 2019-04-26 09:30 A |  | 100% |  | 2019-04-24 07:30 | 2019-04-26 09:30 | 10h |  |  | Desenvolvedor Web - LC | 10h | 10h | 219.8 | 219.8 | 219.8 |
| 170 | 1.2.2.3.2 | **Home do CMS** | 1.12d | 2019-04-24 07:30 A | 2019-04-26 08:30 A |  | 100% |  | 2019-04-24 07:30 | 2019-04-26 08:30 | 1.12d |  |  |  | 9h | 9h | 197.82 | 197.82 | 197.82 |
| 171 | 1.2.2.3.2.1 | Front End | 5h | 2019-04-24 07:30 A | 2019-04-25 08:30 A |  | 100% |  | 2019-04-24 07:30 | 2019-04-25 08:30 | 5h |  |  | Desenvolvedor Web - EM | 5h | 5h | 109.9 | 109.9 | 109.9 |
| 172 | 1.2.2.3.2.2 | Back End | 4h | 2019-04-25 08:30 A | 2019-04-26 08:30 A | 171 | 100% |  | 2019-04-25 08:30 | 2019-04-26 08:30 | 4h |  |  | Desenvolvedor Web - EM | 4h | 4h | 87.92 | 87.92 | 87.92 |
| 173 | 1.2.2.3.3 | **Gerenciamento de funcionários** | 1.25d | 2019-04-26 08:30 A | 2019-05-01 10:30 A | 170 | 100% |  | 2019-04-26 08:30 | 2019-05-01 10:30 | 1.25d |  |  |  | 10h | 10h | 219.8 | 219.8 | 219.8 |
| 174 | 1.2.2.3.3.1 | Front End | 2h | 2019-04-26 08:30 A | 2019-04-26 10:30 A |  | 100% |  | 2019-04-26 08:30 | 2019-04-26 10:30 | 2h |  |  | Desenvolvedor Web - IF | 2h | 2h | 43.96 | 43.96 | 43.96 |
| 175 | 1.2.2.3.3.2 | Back End | 8h | 2019-04-26 10:30 A | 2019-05-01 10:30 A | 174 | 100% |  | 2019-04-26 10:30 | 2019-05-01 10:30 | 8h |  |  | Desenvolvedor Web - IF | 8h | 8h | 175.84 | 175.84 | 175.84 |

| ID | WBS | Task | Duration | Start | Finish | Predecessors | Complete | Remaining | Baseline start | Baseline finish | Baseline duration | Total slack | Free slack | Resources | Work | Actual work | Cost | Baseline cost | Actual cost |
| --- | --- | --- | --- | --- | --- | --- | --- | --- | --- | --- | --- | --- | --- | --- | --- | --- | --- | --- | --- |
| 176 | 1.2.2.3.4 | **Gerenciamento de E-mail Marketing** | 1.25d | 2019-05-01 10:30 | 2019-05-06 08:30 | 173 |  |  | 2019-05-01 10:30 | 2019-05-06 08:30 | 1.25d | 0d |  |  | 10h |  | 219.8 | 219.8 |  |
| 177 | 1.2.2.3.4.1 | Front End | 2h | 2019-05-01 10:30 | 2019-05-02 08:30 |  |  |  | 2019-05-01 10:30 | 2019-05-02 08:30 | 2h | 0d |  | Desenvolvedor Web - KS | 2h |  | 43.96 | 43.96 |  |
| 178 | 1.2.2.3.4.2 | Back End | 8h | 2019-05-02 08:30 | 2019-05-06 08:30 | 177 |  |  | 2019-05-02 08:30 | 2019-05-06 08:30 | 8h | 0d |  | Desenvolvedor Web - KS | 8h |  | 175.84 | 175.84 |  |
| 179 | 1.2.2.3.5 | **Gerenciamento do histórico de locação** | 1.25d | 2019-05-06 08:30 | 2019-05-09 10:30 | 176 |  |  | 2019-05-06 08:30 | 2019-05-09 10:30 | 1.25d | 0d |  |  | 10h |  | 219.8 | 219.8 |  |
| 180 | 1.2.2.3.5.1 | Front End | 2h | 2019-05-06 08:30 | 2019-05-06 10:30 |  |  |  | 2019-05-06 08:30 | 2019-05-06 10:30 | 2h | 0d |  | Desenvolvedor Web - SO | 2h |  | 43.96 | 43.96 |  |
| 181 | 1.2.2.3.5.2 | Back End | 8h | 2019-05-06 10:30 | 2019-05-09 10:30 | 180 |  |  | 2019-05-06 10:30 | 2019-05-09 10:30 | 8h | 0d |  | Desenvolvedor Web - SO | 8h |  | 175.84 | 175.84 |  |
| 182 | 1.2.2.3.6 | **Aprovação de Cancelamento** | 1.25d | 2019-05-09 10:30 | 2019-05-15 08:30 | 179 |  |  | 2019-05-09 10:30 | 2019-05-15 08:30 | 1.25d | 0d |  |  | 10h |  | 264.1 | 264.1 |  |
| 183 | 1.2.2.3.6.1 | Front End | 2h | 2019-05-09 10:30 | 2019-05-10 08:30 |  |  |  | 2019-05-09 10:30 | 2019-05-10 08:30 | 2h | 0d |  | Desenvolvedor Mobile - KS | 2h |  | 52.82 | 52.82 |  |
| 184 | 1.2.2.3.6.2 | Back End | 8h | 2019-05-10 08:30 | 2019-05-15 08:30 | 183 |  |  | 2019-05-10 08:30 | 2019-05-15 08:30 | 8h | 0d |  | Desenvolvedor Mobile - KS | 8h |  | 211.28 | 211.28 |  |
| 185 | 1.2.2.3.7 | **Aprovação de Cadastros** | 1.25d | 2019-05-15 08:30 | 2019-05-17 10:30 | 182 |  |  | 2019-05-15 08:30 | 2019-05-17 10:30 | 1.25d | 0d |  |  | 10h |  | 219.8 | 219.8 |  |
| 186 | 1.2.2.3.7.1 | Front End | 2h | 2019-05-15 08:30 | 2019-05-15 10:30 |  |  |  | 2019-05-15 08:30 | 2019-05-15 10:30 | 2h | 0d |  | Desenvolvedor Web - EM | 2h |  | 43.96 | 43.96 |  |
| 187 | 1.2.2.3.7.2 | Back End | 8h | 2019-05-15 10:30 | 2019-05-17 10:30 | 186 |  |  | 2019-05-15 10:30 | 2019-05-17 10:30 | 8h | 0d |  | Desenvolvedor Web - EM | 8h |  | 175.84 | 175.84 |  |
| 188 | 1.2.2.3.8 | **Administração das páginas do Site** | 1.25d | 2019-05-17 10:30 A | 2019-05-23 08:30 | 185 | 38% | 0.77d | 2019-05-17 10:30 | 2019-05-23 08:30 | 1.25d | 2.38d | 0d |  | 117h | 45h | 2,607.1 | 2,607.1 | 989.1 |
| 189 | 1.2.2.3.8.1 | **Index** | 1.25d | 2019-05-17 10:30 | 2019-05-23 08:30 |  |  |  | 2019-05-17 10:30 | 2019-05-23 08:30 | 1.25d | 2.38d |  |  | 12h |  | 263.76 | 263.76 |  |
| 190 | 1.2.2.3.8.1.1 | Front End | 2h | 2019-05-17 10:30 | 2019-05-20 08:30 |  |  |  | 2019-05-17 10:30 | 2019-05-20 08:30 | 2h | 2.38d | 0d | Desenvolvedor Web - IF; Desenvolvedor Web - KS | 4h |  | 87.92 | 87.92 |  |
| 191 | 1.2.2.3.8.1.2 | Back End | 8h | 2019-05-20 08:30 | 2019-05-23 08:30 | 190 |  |  | 2019-05-20 08:30 | 2019-05-23 08:30 | 8h | 2.38d |  | Desenvolvedor Web - LC | 8h |  | 175.84 | 175.84 |  |
| 192 | 1.2.2.3.8.2 | **Anuncios** | 1.25d | 2019-05-17 10:30 | 2019-05-23 08:30 |  |  |  | 2019-05-17 10:30 | 2019-05-23 08:30 | 1.25d | 2.38d |  |  | 12h |  | 263.76 | 263.76 |  |
| 193 | 1.2.2.3.8.2.1 | Front End | 2h | 2019-05-17 10:30 | 2019-05-20 08:30 |  |  |  | 2019-05-17 10:30 | 2019-05-20 08:30 | 2h | 2.38d | 0d | Desenvolvedor Web - IF; Desenvolvedor Web - KS | 4h |  | 87.92 | 87.92 |  |
| 194 | 1.2.2.3.8.2.2 | Back End | 8h | 2019-05-20 08:30 | 2019-05-23 08:30 | 193 |  |  | 2019-05-20 08:30 | 2019-05-23 08:30 | 8h | 2.38d |  | Desenvolvedor Web - LC | 8h |  | 175.84 | 175.84 |  |
| 195 | 1.2.2.3.8.3 | **Parceiros** | 1.25d | 2019-05-17 10:30 A | 2019-05-23 08:30 A |  | 100% |  | 2019-05-17 10:30 | 2019-05-23 08:30 | 1.25d |  |  |  | 12h | 12h | 263.76 | 263.76 | 263.76 |
| 196 | 1.2.2.3.8.3.1 | Front End | 2h | 2019-05-17 10:30 A | 2019-05-20 08:30 A |  | 100% |  | 2019-05-17 10:30 | 2019-05-20 08:30 | 2h |  |  | Desenvolvedor Web - IF; Desenvolvedor Web - KS | 4h | 4h | 87.92 | 87.92 | 87.92 |
| 197 | 1.2.2.3.8.3.2 | Back End | 8h | 2019-05-20 08:30 A | 2019-05-23 08:30 A | 196 | 100% |  | 2019-05-20 08:30 | 2019-05-23 08:30 | 8h |  |  | Desenvolvedor Web - KS | 8h | 8h | 175.84 | 175.84 | 175.84 |
| 198 | 1.2.2.3.8.4 | **Como Funciona** | 1.25d | 2019-05-17 10:30 A | 2019-05-23 08:30 A |  | 100% |  | 2019-05-17 10:30 | 2019-05-23 08:30 | 1.25d |  |  |  | 12h | 12h | 263.76 | 263.76 | 263.76 |
| 199 | 1.2.2.3.8.4.1 | Front End | 2h | 2019-05-17 10:30 A | 2019-05-20 08:30 A |  | 100% |  | 2019-05-17 10:30 | 2019-05-20 08:30 | 2h |  |  | Desenvolvedor Web - IF; Desenvolvedor Web - KS | 4h | 4h | 87.92 | 87.92 | 87.92 |
| 200 | 1.2.2.3.8.4.2 | Back End | 8h | 2019-05-20 08:30 A | 2019-05-23 08:30 A | 199 | 100% |  | 2019-05-20 08:30 | 2019-05-23 08:30 | 8h |  |  | Desenvolvedor Web - KS | 8h | 8h | 175.84 | 175.84 | 175.84 |

| ID | WBS | Task | Duration | Start | Finish | Predecessors | Complete | Baseline start | Baseline finish | Baseline duration | Total slack | Free slack | Resources | Work | Actual work | Cost | Baseline cost | Actual cost |
| --- | --- | --- | --- | --- | --- | --- | --- | --- | --- | --- | --- | --- | --- | --- | --- | --- | --- | --- |
| 201 | 1.2.2.3.8.5 | **Duvidas Frequentes** | 1.25d | 2019-05-17 10:30 | 2019-05-23 08:30 |  |  | 2019-05-17 10:30 | 2019-05-23 08:30 | 1.25d | 2.38d |  |  | 12h |  | 263.76 | 263.76 |  |
| 202 | 1.2.2.3.8.5.1 | Front End | 2h | 2019-05-17 10:30 | 2019-05-20 08:30 |  |  | 2019-05-17 10:30 | 2019-05-20 08:30 | 2h | 2.38d | 0d | Desenvolvedor Web - IF; Desenvolvedor Web - KS | 4h |  | 87.92 | 87.92 |  |
| 203 | 1.2.2.3.8.5.2 | Back End | 8h | 2019-05-20 08:30 | 2019-05-23 08:30 | 202 |  | 2019-05-20 08:30 | 2019-05-23 08:30 | 8h | 2.38d |  | Desenvolvedor Web - SO | 8h |  | 175.84 | 175.84 |  |
| 204 | 1.2.2.3.8.6 | **Fale Conosco** | 1.25d | 2019-05-17 10:30 | 2019-05-23 08:30 |  |  | 2019-05-17 10:30 | 2019-05-23 08:30 | 1.25d | 2.38d |  |  | 12h |  | 263.76 | 263.76 |  |
| 205 | 1.2.2.3.8.6.1 | Front End | 2h | 2019-05-17 10:30 | 2019-05-20 08:30 |  |  | 2019-05-17 10:30 | 2019-05-20 08:30 | 2h | 2.38d | 0d | Desenvolvedor Web - IF; Desenvolvedor Web - KS | 4h |  | 87.92 | 87.92 |  |
| 206 | 1.2.2.3.8.6.2 | Back End | 8h | 2019-05-20 08:30 | 2019-05-23 08:30 | 205 |  | 2019-05-20 08:30 | 2019-05-23 08:30 | 8h | 2.38d |  | Desenvolvedor Web - SO | 8h |  | 175.84 | 175.84 |  |
| 207 | 1.2.2.3.8.7 | **Login** | 0.88d | 2019-05-17 10:30 A | 2019-05-22 09:30 A |  | 100% | 2019-05-17 10:30 | 2019-05-22 09:30 | 0.88d |  |  |  | 9h | 9h | 197.82 | 197.82 | 197.82 |
| 208 | 1.2.2.3.8.7.1 | Front End | 2h | 2019-05-17 10:30 A | 2019-05-20 08:30 A |  | 100% | 2019-05-17 10:30 | 2019-05-20 08:30 | 2h |  |  | Desenvolvedor Web - IF; Desenvolvedor Web - KS | 4h | 4h | 87.92 | 87.92 | 87.92 |
| 209 | 1.2.2.3.8.7.2 | Back End | 5h | 2019-05-20 08:30 A | 2019-05-22 09:30 A | 208 | 100% | 2019-05-20 08:30 | 2019-05-22 09:30 | 5h |  |  | Desenvolvedor Web - LC | 5h | 5h | 109.9 | 109.9 | 109.9 |
| 210 | 1.2.2.3.8.8 | **Cadastro** | 1.25d | 2019-05-17 10:30 | 2019-05-23 08:30 |  |  | 2019-05-17 10:30 | 2019-05-23 08:30 | 1.25d | 2.38d |  |  | 12h |  | 299.2 | 299.2 |  |
| 211 | 1.2.2.3.8.8.1 | Front End | 2h | 2019-05-17 10:30 | 2019-05-20 08:30 |  |  | 2019-05-17 10:30 | 2019-05-20 08:30 | 2h | 2.38d | 0d | Desenvolvedor Web - IF; Desenvolvedor Web - KS | 4h |  | 87.92 | 87.92 |  |
| 212 | 1.2.2.3.8.8.2 | Back End | 8h | 2019-05-20 08:30 | 2019-05-23 08:30 | 211 |  | 2019-05-20 08:30 | 2019-05-23 08:30 | 8h | 2.38d |  | Desenvolvedor Mobile - IF | 8h |  | 211.28 | 211.28 |  |
| 213 | 1.2.2.3.8.9 | **Avaliações do Mês** | 1.25d | 2019-05-17 10:30 | 2019-05-23 08:30 |  |  | 2019-05-17 10:30 | 2019-05-23 08:30 | 1.25d | 2.38d |  |  | 12h |  | 263.76 | 263.76 |  |
| 214 | 1.2.2.3.8.9.1 | Front End | 2h | 2019-05-17 10:30 | 2019-05-20 08:30 |  |  | 2019-05-17 10:30 | 2019-05-20 08:30 | 2h | 2.38d | 0d | Desenvolvedor Web - IF; Desenvolvedor Web - KS | 4h |  | 87.92 | 87.92 |  |
| 215 | 1.2.2.3.8.9.2 | Back End | 8h | 2019-05-20 08:30 | 2019-05-23 08:30 | 214 |  | 2019-05-20 08:30 | 2019-05-23 08:30 | 8h | 2.38d |  | Desenvolvedor Web - EM | 8h |  | 175.84 | 175.84 |  |
| 216 | 1.2.2.3.8.10 | **Termos de Uso** | 1.25d | 2019-05-17 10:30 A | 2019-05-23 08:30 A |  | 100% | 2019-05-17 10:30 | 2019-05-23 08:30 | 1.25d |  |  |  | 12h | 12h | 263.76 | 263.76 | 263.76 |
| 217 | 1.2.2.3.8.10.1 | Front End | 2h | 2019-05-17 10:30 A | 2019-05-20 08:30 A |  | 100% | 2019-05-17 10:30 | 2019-05-20 08:30 | 2h |  |  | Desenvolvedor Web - IF; Desenvolvedor Web - KS | 4h | 4h | 87.92 | 87.92 | 87.92 |
| 218 | 1.2.2.3.8.10.2 | Back End | 8h | 2019-05-20 08:30 A | 2019-05-23 08:30 A | 217 | 100% | 2019-05-20 08:30 | 2019-05-23 08:30 | 8h |  |  | Desenvolvedor Web - EM | 8h | 8h | 175.84 | 175.84 | 175.84 |
| 219 | 1.2.2.3.9 | **Relatório** | 1.25d | 2019-05-23 08:30 | 2019-05-27 10:30 | 188 |  | 2019-05-23 08:30 | 2019-05-27 10:30 | 1.25d | 2.38d |  |  | 14h |  | 307.72 | 307.72 |  |
| 220 | 1.2.2.3.9.1 | Front End | 2h | 2019-05-23 08:30 | 2019-05-23 10:30 |  |  | 2019-05-23 08:30 | 2019-05-23 10:30 | 2h | 3.38d |  | Desenvolvedor Web - IF; Desenvolvedor Web - KS | 4h |  | 87.92 | 87.92 |  |
| 221 | 1.2.2.3.9.2 | Back End | 10h | 2019-05-23 08:30 | 2019-05-27 10:30 |  |  | 2019-05-23 08:30 | 2019-05-27 10:30 | 10h | 2.38d |  | Desenvolvedor Web - IF | 10h |  | 219.8 | 219.8 |  |
| 222 | 1.2.3 | **Mobile** | 7.5d | 2019-06-05 09:30 | 2019-07-01 09:30 | 111 |  | 2019-06-05 09:30 | 2019-07-01 09:30 | 7.5d | 0d |  |  | 120h |  | 3,169.2 | 3,169.2 |  |
| 223 | 1.2.3.1 | **Login** | 1.5d | 2019-06-05 09:30 | 2019-06-10 09:30 |  |  | 2019-06-05 09:30 | 2019-06-10 09:30 | 1.5d | 0d |  | Desenvolvedor Mobile - KS | 24h |  | 633.84 | 633.84 |  |
| 224 | 1.2.3.1.1 | Front End | 2h | 2019-06-05 09:30 | 2019-06-05 11:30 |  |  | 2019-06-05 09:30 | 2019-06-05 11:30 | 2h | 0d |  | Desenvolvedor Mobile - KS | 2h |  | 52.82 | 52.82 |  |
| 225 | 1.2.3.1.2 | Back End | 10h | 2019-06-06 07:30 | 2019-06-10 09:30 | 224 |  | 2019-06-06 07:30 | 2019-06-10 09:30 | 10h | 0d |  | Desenvolvedor Mobile - KS | 10h |  | 264.1 | 264.1 |  |

| ID | WBS | Task | Duration | Start | Finish | Predecessors | Baseline start | Baseline finish | Baseline duration | Total slack | Resources | Work | Cost | Baseline cost |
| --- | --- | --- | --- | --- | --- | --- | --- | --- | --- | --- | --- | --- | --- | --- |
| 226 | 1.2.3.2 | **Busca de veículo** | 1.5d | 2019-06-10 09:30 | 2019-06-14 09:30 | 223 | 2019-06-10 09:30 | 2019-06-14 09:30 | 1.5d | 0d | Desenvolvedor Mobile - LC | 24h | 633.84 | 633.84 |
| 227 | 1.2.3.2.1 | Front End | 2h | 2019-06-10 09:30 | 2019-06-10 11:30 |  | 2019-06-10 09:30 | 2019-06-10 11:30 | 2h | 0d | Desenvolvedor Mobile - LC | 2h | 52.82 | 52.82 |
| 228 | 1.2.3.2.2 | Back End | 10h | 2019-06-12 07:30 | 2019-06-14 09:30 | 227 | 2019-06-12 07:30 | 2019-06-14 09:30 | 10h | 0d | Desenvolvedor Mobile - LC | 10h | 264.1 | 264.1 |
| 229 | 1.2.3.3 | **Localização** | 1.5d | 2019-06-14 09:30 | 2019-06-20 09:30 | 226 | 2019-06-14 09:30 | 2019-06-20 09:30 | 1.5d | 0d | Desenvolvedor Mobile - IF | 24h | 633.84 | 633.84 |
| 230 | 1.2.3.3.1 | Front | 2h | 2019-06-14 09:30 | 2019-06-14 11:30 |  | 2019-06-14 09:30 | 2019-06-14 11:30 | 2h | 0d | Desenvolvedor Mobile - IF | 2h | 52.82 | 52.82 |
| 231 | 1.2.3.3.2 | Back | 10h | 2019-06-17 07:30 | 2019-06-20 09:30 | 230 | 2019-06-17 07:30 | 2019-06-20 09:30 | 10h | 0d | Desenvolvedor Mobile - IF | 10h | 264.1 | 264.1 |
| 232 | 1.2.3.4 | **Dados do Usuário** | 1.5d | 2019-06-20 09:30 | 2019-06-26 09:30 | 229 | 2019-06-20 09:30 | 2019-06-26 09:30 | 1.5d | 0d | Desenvolvedor Mobile - EM | 24h | 633.84 | 633.84 |
| 233 | 1.2.3.4.1 | Front End | 2h | 2019-06-20 09:30 | 2019-06-20 11:30 |  | 2019-06-20 09:30 | 2019-06-20 11:30 | 2h | 0d | Desenvolvedor Mobile - EM | 2h | 52.82 | 52.82 |
| 234 | 1.2.3.4.2 | Back End | 10h | 2019-06-21 07:30 | 2019-06-26 09:30 | 233 | 2019-06-21 07:30 | 2019-06-26 09:30 | 10h | 0d | Desenvolvedor Mobile - EM | 10h | 264.1 | 264.1 |
| 235 | 1.2.3.5 | **Dados do Veículo** | 1.5d | 2019-06-26 09:30 | 2019-07-01 09:30 | 232 | 2019-06-26 09:30 | 2019-07-01 09:30 | 1.5d | 0d | Desenvolvedor Mobile - SO | 24h | 633.84 | 633.84 |
| 236 | 1.2.3.5.1 | Front End | 2h | 2019-06-26 09:30 | 2019-06-26 11:30 |  | 2019-06-26 09:30 | 2019-06-26 11:30 | 2h | 0d | Desenvolvedor Mobile - SO | 2h | 52.82 | 52.82 |
| 237 | 1.2.3.5.2 | Back End | 10h | 2019-06-27 07:30 | 2019-07-01 09:30 | 236 | 2019-06-27 07:30 | 2019-07-01 09:30 | 10h | 0d | Desenvolvedor Mobile - SO | 10h | 264.1 | 264.1 |
| 238 | 1.2.4 | **Desktop** | 1.5d | 2019-07-01 09:30 | 2019-07-05 09:30 | 222 | 2019-07-01 09:30 | 2019-07-05 09:30 | 1.5d | 0d |  | 276h | 8,434.56 | 8,434.56 |
| 239 | 1.2.4.1 | **Login** | 1.5d | 2019-07-01 09:30 | 2019-07-05 09:30 |  | 2019-07-01 09:30 | 2019-07-05 09:30 | 1.5d | 0d |  | 12h | 366.72 | 366.72 |
| 240 | 1.2.4.1.1 | Front End | 2h | 2019-07-01 09:30 | 2019-07-01 11:30 |  | 2019-07-01 09:30 | 2019-07-01 11:30 | 2h | 0d | Desenvolvedor Desktop - SO | 2h | 61.12 | 61.12 |
| 241 | 1.2.4.1.2 | Back End | 10h | 2019-07-03 07:30 | 2019-07-05 09:30 | 240 | 2019-07-03 07:30 | 2019-07-05 09:30 | 10h | 0d | Desenvolvedor Desktop - SO | 10h | 305.6 | 305.6 |
| 242 | 1.2.4.2 | **Home** | 1.5d | 2019-07-01 09:30 | 2019-07-05 09:30 |  | 2019-07-01 09:30 | 2019-07-05 09:30 | 1.5d | 0d |  | 12h | 366.72 | 366.72 |
| 243 | 1.2.4.2.1 | Front End | 2h | 2019-07-01 09:30 | 2019-07-01 11:30 |  | 2019-07-01 09:30 | 2019-07-01 11:30 | 2h | 0d | Desenvolvedor Desktop - SO | 2h | 61.12 | 61.12 |
| 244 | 1.2.4.2.2 | Back End | 10h | 2019-07-03 07:30 | 2019-07-05 09:30 | 243 | 2019-07-03 07:30 | 2019-07-05 09:30 | 10h | 0d | Desenvolvedor Desktop - SO | 10h | 305.6 | 305.6 |
| 245 | 1.2.4.3 | **Gerenciar banco - cadastrar banco** | 1.5d | 2019-07-01 09:30 | 2019-07-05 09:30 |  | 2019-07-01 09:30 | 2019-07-05 09:30 | 1.5d | 0d |  | 12h | 366.72 | 366.72 |
| 246 | 1.2.4.3.1 | Front End | 2h | 2019-07-01 09:30 | 2019-07-01 11:30 |  | 2019-07-01 09:30 | 2019-07-01 11:30 | 2h | 0d | Desenvolvedor Desktop - EM | 2h | 61.12 | 61.12 |
| 247 | 1.2.4.3.2 | Back End | 10h | 2019-07-03 07:30 | 2019-07-05 09:30 | 246 | 2019-07-03 07:30 | 2019-07-05 09:30 | 10h | 0d | Desenvolvedor Desktop - EM | 10h | 305.6 | 305.6 |
| 248 | 1.2.4.4 | **Gerenciar banco - listar bancos** | 1.5d | 2019-07-01 09:30 | 2019-07-05 09:30 |  | 2019-07-01 09:30 | 2019-07-05 09:30 | 1.5d | 0d |  | 12h | 366.72 | 366.72 |
| 249 | 1.2.4.4.1 | Front End | 2h | 2019-07-01 09:30 | 2019-07-01 11:30 |  | 2019-07-01 09:30 | 2019-07-01 11:30 | 2h | 0d | Desenvolvedor Desktop - EM | 2h | 61.12 | 61.12 |
| 250 | 1.2.4.4.2 | Back End | 10h | 2019-07-03 07:30 | 2019-07-05 09:30 | 249 | 2019-07-03 07:30 | 2019-07-05 09:30 | 10h | 0d | Desenvolvedor Desktop - EM | 10h | 305.6 | 305.6 |

| ID | WBS | Task | Duration | Start | Finish | Predecessors | Baseline start | Baseline finish | Baseline duration | Total slack | Resources | Work | Cost | Baseline cost |
| --- | --- | --- | --- | --- | --- | --- | --- | --- | --- | --- | --- | --- | --- | --- |
| 251 | 1.2.4.5 | **Gerenciar banco - cad/listar** | 1.5d | 2019-07-01 09:30 | 2019-07-05 09:30 |  | 2019-07-01 09:30 | 2019-07-05 09:30 | 1.5d | 0d |  | 12h | 366.72 | 366.72 |
| 252 | 1.2.4.5.1 | Front End | 2h | 2019-07-01 09:30 | 2019-07-01 11:30 |  | 2019-07-01 09:30 | 2019-07-01 11:30 | 2h | 0d | Desenvolvedor Desktop - EM | 2h | 61.12 | 61.12 |
| 253 | 1.2.4.5.2 | Back End | 10h | 2019-07-03 07:30 | 2019-07-05 09:30 | 252 | 2019-07-03 07:30 | 2019-07-05 09:30 | 10h | 0d | Desenvolvedor Desktop - EM | 10h | 305.6 | 305.6 |
| 254 | 1.2.4.6 | **Gerenciar fornecedores - cadastrar fornecedores** | 1.5d | 2019-07-01 09:30 | 2019-07-05 09:30 |  | 2019-07-01 09:30 | 2019-07-05 09:30 | 1.5d | 0d |  | 12h | 366.72 | 366.72 |
| 255 | 1.2.4.6.1 | Front End | 2h | 2019-07-01 09:30 | 2019-07-01 11:30 |  | 2019-07-01 09:30 | 2019-07-01 11:30 | 2h | 0d | Desenvolvedor Desktop - KS | 2h | 61.12 | 61.12 |
| 256 | 1.2.4.6.2 | Back End | 10h | 2019-07-03 07:30 | 2019-07-05 09:30 | 255 | 2019-07-03 07:30 | 2019-07-05 09:30 | 10h | 0d | Desenvolvedor Desktop - KS | 10h | 305.6 | 305.6 |
| 257 | 1.2.4.7 | **Gerenciar Fornecedores - listar fornecedores** | 1.5d | 2019-07-01 09:30 | 2019-07-05 09:30 |  | 2019-07-01 09:30 | 2019-07-05 09:30 | 1.5d | 0d |  | 12h | 366.72 | 366.72 |
| 258 | 1.2.4.7.1 | Front End | 2h | 2019-07-01 09:30 | 2019-07-01 11:30 |  | 2019-07-01 09:30 | 2019-07-01 11:30 | 2h | 0d | Desenvolvedor Desktop - KS | 2h | 61.12 | 61.12 |
| 259 | 1.2.4.7.2 | Back End | 10h | 2019-07-03 07:30 | 2019-07-05 09:30 | 258 | 2019-07-03 07:30 | 2019-07-05 09:30 | 10h | 0d | Desenvolvedor Desktop - KS | 10h | 305.6 | 305.6 |
| 260 | 1.2.4.8 | **Gerenciar Fornecedores - cad/listar** | 1.5d | 2019-07-01 09:30 | 2019-07-05 09:30 |  | 2019-07-01 09:30 | 2019-07-05 09:30 | 1.5d | 0d |  | 12h | 366.72 | 366.72 |
| 261 | 1.2.4.8.1 | Front End | 2h | 2019-07-01 09:30 | 2019-07-01 11:30 |  | 2019-07-01 09:30 | 2019-07-01 11:30 | 2h | 0d | Desenvolvedor Desktop - KS | 2h | 61.12 | 61.12 |
| 262 | 1.2.4.8.2 | Back End | 10h | 2019-07-03 07:30 | 2019-07-05 09:30 | 261 | 2019-07-03 07:30 | 2019-07-05 09:30 | 10h | 0d | Desenvolvedor Desktop - KS | 10h | 305.6 | 305.6 |
| 263 | 1.2.4.9 | **Gerenciar Produtos - cadastrar produto** | 1.5d | 2019-07-01 09:30 | 2019-07-05 09:30 |  | 2019-07-01 09:30 | 2019-07-05 09:30 | 1.5d | 0d |  | 12h | 366.72 | 366.72 |
| 264 | 1.2.4.9.1 | Front End | 2h | 2019-07-01 09:30 | 2019-07-01 11:30 |  | 2019-07-01 09:30 | 2019-07-01 11:30 | 2h | 0d | Desenvolvedor Desktop - LC | 2h | 61.12 | 61.12 |
| 265 | 1.2.4.9.2 | Back End | 10h | 2019-07-03 07:30 | 2019-07-05 09:30 | 264 | 2019-07-03 07:30 | 2019-07-05 09:30 | 10h | 0d | Desenvolvedor Desktop - LC | 10h | 305.6 | 305.6 |
| 266 | 1.2.4.10 | **Gerenciar Produtos - listar produtos** | 1.5d | 2019-07-01 09:30 | 2019-07-05 09:30 |  | 2019-07-01 09:30 | 2019-07-05 09:30 | 1.5d | 0d |  | 12h | 366.72 | 366.72 |
| 267 | 1.2.4.10.1 | Front End | 2h | 2019-07-01 09:30 | 2019-07-01 11:30 |  | 2019-07-01 09:30 | 2019-07-01 11:30 | 2h | 0d | Desenvolvedor Desktop - LC | 2h | 61.12 | 61.12 |
| 268 | 1.2.4.10.2 | Back End | 10h | 2019-07-03 07:30 | 2019-07-05 09:30 | 267 | 2019-07-03 07:30 | 2019-07-05 09:30 | 10h | 0d | Desenvolvedor Desktop - LC | 10h | 305.6 | 305.6 |
| 269 | 1.2.4.11 | **Gerenciar Produtos - cad/listar** | 1.5d | 2019-07-01 09:30 | 2019-07-05 09:30 |  | 2019-07-01 09:30 | 2019-07-05 09:30 | 1.5d | 0d |  | 12h | 366.72 | 366.72 |
| 270 | 1.2.4.11.1 | Front End | 2h | 2019-07-01 09:30 | 2019-07-01 11:30 |  | 2019-07-01 09:30 | 2019-07-01 11:30 | 2h | 0d | Desenvolvedor Desktop - LC | 2h | 61.12 | 61.12 |
| 271 | 1.2.4.11.2 | Back End | 10h | 2019-07-03 07:30 | 2019-07-05 09:30 | 270 | 2019-07-03 07:30 | 2019-07-05 09:30 | 10h | 0d | Desenvolvedor Desktop - LC | 10h | 305.6 | 305.6 |
| 272 | 1.2.4.12 | **Gerenciar Usuários - cadastrar usuário** | 1.5d | 2019-07-01 09:30 | 2019-07-05 09:30 |  | 2019-07-01 09:30 | 2019-07-05 09:30 | 1.5d | 0d |  | 12h | 366.72 | 366.72 |
| 273 | 1.2.4.12.1 | Front End | 2h | 2019-07-01 09:30 | 2019-07-01 11:30 |  | 2019-07-01 09:30 | 2019-07-01 11:30 | 2h | 0d | Desenvolvedor Desktop - IF | 2h | 61.12 | 61.12 |
| 274 | 1.2.4.12.2 | Back End | 10h | 2019-07-03 07:30 | 2019-07-05 09:30 | 273 | 2019-07-03 07:30 | 2019-07-05 09:30 | 10h | 0d | Desenvolvedor Desktop - IF | 10h | 305.6 | 305.6 |

Notes:
- 251: Página onde usuário pode escolher entre cadastrar um novo banco ou listar os bancos cadastrados

| ID | WBS | Task | Duration | Start | Finish | Predecessors | Baseline start | Baseline finish | Baseline duration | Total slack | Resources | Work | Cost | Baseline cost |
| --- | --- | --- | --- | --- | --- | --- | --- | --- | --- | --- | --- | --- | --- | --- |
| 275 | 1.2.4.13 | **Gerenciar Usuários - listar usuários** | 1.5d | 2019-07-01 09:30 | 2019-07-05 09:30 |  | 2019-07-01 09:30 | 2019-07-05 09:30 | 1.5d | 0d |  | 12h | 366.72 | 366.72 |
| 276 | 1.2.4.13.1 | Front End | 2h | 2019-07-01 09:30 | 2019-07-01 11:30 |  | 2019-07-01 09:30 | 2019-07-01 11:30 | 2h | 0d | Desenvolvedor Desktop - IF | 2h | 61.12 | 61.12 |
| 277 | 1.2.4.13.2 | Back End | 10h | 2019-07-03 07:30 | 2019-07-05 09:30 | 276 | 2019-07-03 07:30 | 2019-07-05 09:30 | 10h | 0d | Desenvolvedor Desktop - IF | 10h | 305.6 | 305.6 |
| 278 | 1.2.4.14 | **Gerenciar Usuários - cad/listar** | 1.5d | 2019-07-01 09:30 | 2019-07-05 09:30 |  | 2019-07-01 09:30 | 2019-07-05 09:30 | 1.5d | 0d |  | 12h | 366.72 | 366.72 |
| 279 | 1.2.4.14.1 | Front End | 2h | 2019-07-01 09:30 | 2019-07-01 11:30 |  | 2019-07-01 09:30 | 2019-07-01 11:30 | 2h | 0d | Desenvolvedor Desktop - IF | 2h | 61.12 | 61.12 |
| 280 | 1.2.4.14.2 | Back End | 10h | 2019-07-03 07:30 | 2019-07-05 09:30 | 279 | 2019-07-03 07:30 | 2019-07-05 09:30 | 10h | 0d | Desenvolvedor Desktop - IF | 10h | 305.6 | 305.6 |
| 281 | 1.2.4.15 | **Contas A Pagar - Listar contas** | 1.5d | 2019-07-01 09:30 | 2019-07-05 09:30 |  | 2019-07-01 09:30 | 2019-07-05 09:30 | 1.5d | 0d |  | 12h | 366.72 | 366.72 |
| 282 | 1.2.4.15.1 | Front End | 2h | 2019-07-01 09:30 | 2019-07-01 11:30 |  | 2019-07-01 09:30 | 2019-07-01 11:30 | 2h | 0d | Desenvolvedor Desktop - LC | 2h | 61.12 | 61.12 |
| 283 | 1.2.4.15.2 | Back End | 10h | 2019-07-03 07:30 | 2019-07-05 09:30 | 282 | 2019-07-03 07:30 | 2019-07-05 09:30 | 10h | 0d | Desenvolvedor Desktop - LC | 10h | 305.6 | 305.6 |
| 284 | 1.2.4.16 | **Contas A Pagar - Visualizar conta** | 1.5d | 2019-07-01 09:30 | 2019-07-05 09:30 |  | 2019-07-01 09:30 | 2019-07-05 09:30 | 1.5d | 0d |  | 12h | 366.72 | 366.72 |
| 285 | 1.2.4.16.1 | Front End | 2h | 2019-07-01 09:30 | 2019-07-01 11:30 |  | 2019-07-01 09:30 | 2019-07-01 11:30 | 2h | 0d | Desenvolvedor Desktop - LC | 2h | 61.12 | 61.12 |
| 286 | 1.2.4.16.2 | Back End | 10h | 2019-07-03 07:30 | 2019-07-05 09:30 | 285 | 2019-07-03 07:30 | 2019-07-05 09:30 | 10h | 0d | Desenvolvedor Desktop - LC | 10h | 305.6 | 305.6 |
| 287 | 1.2.4.17 | **Contas A Receber - Listar contas** | 1.5d | 2019-07-01 09:30 | 2019-07-05 09:30 |  | 2019-07-01 09:30 | 2019-07-05 09:30 | 1.5d | 0d |  | 12h | 366.72 | 366.72 |
| 288 | 1.2.4.17.1 | Front End | 2h | 2019-07-01 09:30 | 2019-07-01 11:30 |  | 2019-07-01 09:30 | 2019-07-01 11:30 | 2h | 0d | Desenvolvedor Desktop - KS | 2h | 61.12 | 61.12 |
| 289 | 1.2.4.17.2 | Back End | 10h | 2019-07-03 07:30 | 2019-07-05 09:30 | 288 | 2019-07-03 07:30 | 2019-07-05 09:30 | 10h | 0d | Desenvolvedor Desktop - KS | 10h | 305.6 | 305.6 |
| 290 | 1.2.4.18 | **Contas A Receber - Visualizar contas** | 1.5d | 2019-07-01 09:30 | 2019-07-05 09:30 |  | 2019-07-01 09:30 | 2019-07-05 09:30 | 1.5d | 0d |  | 12h | 366.72 | 366.72 |
| 291 | 1.2.4.18.1 | Front End | 2h | 2019-07-01 09:30 | 2019-07-01 11:30 |  | 2019-07-01 09:30 | 2019-07-01 11:30 | 2h | 0d | Desenvolvedor Desktop - KS | 2h | 61.12 | 61.12 |
| 292 | 1.2.4.18.2 | Back End | 10h | 2019-07-03 07:30 | 2019-07-05 09:30 | 291 | 2019-07-03 07:30 | 2019-07-05 09:30 | 10h | 0d | Desenvolvedor Desktop - KS | 10h | 305.6 | 305.6 |
| 293 | 1.2.4.19 | **Pedidos de Compra - Cadastro do pedido** | 1.5d | 2019-07-01 09:30 | 2019-07-05 09:30 |  | 2019-07-01 09:30 | 2019-07-05 09:30 | 1.5d | 0d |  | 12h | 366.72 | 366.72 |
| 294 | 1.2.4.19.1 | Front End | 2h | 2019-07-01 09:30 | 2019-07-01 11:30 |  | 2019-07-01 09:30 | 2019-07-01 11:30 | 2h | 0d | Desenvolvedor Desktop - SO | 2h | 61.12 | 61.12 |
| 295 | 1.2.4.19.2 | Back End | 10h | 2019-07-03 07:30 | 2019-07-05 09:30 | 294 | 2019-07-03 07:30 | 2019-07-05 09:30 | 10h | 0d | Desenvolvedor Desktop - SO | 10h | 305.6 | 305.6 |
| 296 | 1.2.4.20 | **Pedidos de Compra - Listar pedidos** | 1.5d | 2019-07-01 09:30 | 2019-07-05 09:30 |  | 2019-07-01 09:30 | 2019-07-05 09:30 | 1.5d | 0d |  | 12h | 366.72 | 366.72 |
| 297 | 1.2.4.20.1 | Front End | 2h | 2019-07-01 09:30 | 2019-07-01 11:30 |  | 2019-07-01 09:30 | 2019-07-01 11:30 | 2h | 0d | Desenvolvedor Desktop - SO | 2h | 61.12 | 61.12 |
| 298 | 1.2.4.20.2 | Back End | 10h | 2019-07-03 07:30 | 2019-07-05 09:30 | 297 | 2019-07-03 07:30 | 2019-07-05 09:30 | 10h | 0d | Desenvolvedor Desktop - SO | 10h | 305.6 | 305.6 |

| ID | WBS | Task | Duration | Start | Finish | Predecessors | Baseline start | Baseline finish | Baseline duration | Total slack | Resources | Work | Cost | Baseline cost |
| --- | --- | --- | --- | --- | --- | --- | --- | --- | --- | --- | --- | --- | --- | --- |
| 299 | 1.2.4.21 | **Pedidos de Compra - cad/listar** | 1.5d | 2019-07-01 09:30 | 2019-07-05 09:30 |  | 2019-07-01 09:30 | 2019-07-05 09:30 | 1.5d | 0d |  | 12h | 366.72 | 366.72 |
| 300 | 1.2.4.21.1 | Front End | 2h | 2019-07-01 09:30 | 2019-07-01 11:30 |  | 2019-07-01 09:30 | 2019-07-01 11:30 | 2h | 0d | Desenvolvedor Desktop - SO | 2h | 61.12 | 61.12 |
| 301 | 1.2.4.21.2 | Back End | 10h | 2019-07-03 07:30 | 2019-07-05 09:30 | 300 | 2019-07-03 07:30 | 2019-07-05 09:30 | 10h | 0d | Desenvolvedor Desktop - SO | 10h | 305.6 | 305.6 |
| 302 | 1.2.4.22 | **Relatórios - Listar relatórios** | 1.5d | 2019-07-01 09:30 | 2019-07-05 09:30 |  | 2019-07-01 09:30 | 2019-07-05 09:30 | 1.5d | 0d |  | 12h | 366.72 | 366.72 |
| 303 | 1.2.4.22.1 | Front End | 2h | 2019-07-01 09:30 | 2019-07-01 11:30 |  | 2019-07-01 09:30 | 2019-07-01 11:30 | 2h | 0d | Desenvolvedor Desktop - IF | 2h | 61.12 | 61.12 |
| 304 | 1.2.4.22.2 | Back End | 10h | 2019-07-03 07:30 | 2019-07-05 09:30 | 303 | 2019-07-03 07:30 | 2019-07-05 09:30 | 10h | 0d | Desenvolvedor Desktop - IF | 10h | 305.6 | 305.6 |
| 305 | 1.2.4.23 | **Relatórios - visualizar** | 1.5d | 2019-07-01 09:30 | 2019-07-05 09:30 |  | 2019-07-01 09:30 | 2019-07-05 09:30 | 1.5d | 0d |  | 12h | 366.72 | 366.72 |
| 306 | 1.2.4.23.1 | Front End | 2h | 2019-07-01 09:30 | 2019-07-01 11:30 |  | 2019-07-01 09:30 | 2019-07-01 11:30 | 2h | 0d | Desenvolvedor Desktop - IF | 2h | 61.12 | 61.12 |
| 307 | 1.2.4.23.2 | Back End | 10h | 2019-07-03 07:30 | 2019-07-05 09:30 | 306 | 2019-07-03 07:30 | 2019-07-05 09:30 | 10h | 0d | Desenvolvedor Desktop - IF | 10h | 305.6 | 305.6 |
| 308 | 1.3 | **APRESENTAÇÃO** | 4.5d | 2019-07-05 09:30 | 2019-07-22 09:30 | 106 | 2019-07-05 09:30 | 2019-07-22 09:30 | 4.5d | 0d |  | 180h | 4,274.4 | 4,274.4 |
| 309 | 1.3.1 | Montagem no Foyer | 30h | 2019-07-05 09:30 | 2019-07-18 11:30 |  | 2019-07-05 09:30 | 2019-07-18 11:30 | 30h | 0d | Desenvolvedor Web - IF; Desenvolvedor Web - KS; Desenvolvedor Web - LC; Desenvolvedor Web - SO; Supervisor de Desenvolvimento - EM | 150h | 3,615 | 3,615 |
| 310 | 1.3.2 | Avaliação Técnica | 2h | 2019-07-19 07:30 | 2019-07-19 09:30 | 309 | 2019-07-19 07:30 | 2019-07-19 09:30 | 2h | 0d | Desenvolvedor Web - EM; Desenvolvedor Web - IF; Desenvolvedor Web - KS; Desenvolvedor Web - LC; Desenvolvedor Web - SO | 10h | 219.8 | 219.8 |
| 311 | 1.3.3 | Apresentação Prévia | 2h | 2019-07-19 09:30 | 2019-07-19 11:30 | 310 | 2019-07-19 09:30 | 2019-07-19 11:30 | 2h | 0d | Desenvolvedor Web - EM; Desenvolvedor Web - IF; Desenvolvedor Web - KS; Desenvolvedor Web - LC; Desenvolvedor Web - SO | 10h | 219.8 | 219.8 |
| 312 | 1.3.4 | Apresentação Comercial | 2h | 2019-07-22 07:30 | 2019-07-22 09:30 | 311 | 2019-07-22 07:30 | 2019-07-22 09:30 | 2h | 0d | Desenvolvedor Web - EM; Desenvolvedor Web - IF; Desenvolvedor Web - KS; Desenvolvedor Web - LC; Desenvolvedor Web - SO | 10h | 219.8 | 219.8 |
